# MIS Projketni Plan

How a schedule from MS Project changed from version to version. A marks actual dates.

## Version 1 (saved 2020-05-30)

Note of the change: Merge pull request #16 from natalijamitic/master

| ID | WBS | Task | Duration | Start | Finish | Predecessors | Total float |
| --- | --- | --- | --- | --- | --- | --- | --- |
| 1 | 1 | **WP1 - Analiza tržišta i korisničkih zahteva** | 67d | 2020-05-04 | 2020-08-04 |  | 0d |
| 2 | 1.1 | **Analiza tržišta** | 33d | 2020-05-04 | 2020-06-17 |  | 0d |
| 3 | 1.1.1 | **Iniciranje analize tržišta** | 4d | 2020-05-04 | 2020-05-07 |  | 0d |
| 4 |  | Selekcija ljudi koji će raditi analizu | 2d | 2020-05-04 | 2020-05-05 |  | 0d |
| 5 |  | Kratak opis posla | 2d | 2020-05-04 | 2020-05-05 |  | 0d |
| 6 |  | Raspodela izabranih u timove | 1d | 2020-05-06 | 2020-05-06 | 4, 5 | 0d |
| 7 |  | Dokumentovanje aktivnosti | 1d | 2020-05-07 | 2020-05-07 | 6 | 0d |
| 8 | 1.1.2 | **Planiranje analize tržišta** | 11d | 2020-05-08 | 2020-05-22 | 3 | 0d |
| 9 |  | Definisanje aktivnosti koje će se izvršiti u fazi realizacije | 3d | 2020-05-08 | 2020-05-12 |  | 0d |
| 10 |  | Podela aktivnosti po timovima | 1d | 2020-05-13 | 2020-05-13 | 9 | 0d |
| 11 | 1.1.2.3 | **Priprema za analizu tržišta** | 5d | 2020-05-14 | 2020-05-20 |  | 0d |
| 12 |  | Nalaženje pouzdanih izvora informacija | 2d | 2020-05-14 | 2020-05-15 | 10 | 3d |
| 13 |  | Pravljenje anketa | 3d | 2020-05-14 | 2020-05-18 | 10 | 0d |
| 14 |  | Instalacija i konfiguracija softvera za analizu prikupljenih podataka | 2d | 2020-05-19 | 2020-05-20 | 13 | 0d |
| 15 |  | Pisanje izveštaja o planiranju analize | 2d | 2020-05-21 | 2020-05-22 | 11 | 0d |
| 16 | 1.1.3 | **Realizacija analize tržišta** | 16d | 2020-05-25 | 2020-06-15 | 8 | 0d |
| 17 | 1.1.3.1 | **Prikupljanje podataka** | 3d | 2020-05-25 | 2020-05-27 |  | 6d |
| 18 |  | Prikupljanje podataka o sličnim projektima | 3d | 2020-05-25 | 2020-05-27 |  | 6d |
| 19 |  | Prikupljanje podataka sa odgovarajućih sajtova | 3d | 2020-05-25 | 2020-05-27 |  | 6d |
| 20 |  | Formiranje ciljnih grupa | 2d | 2020-05-25 | 2020-05-26 |  | 7d |
| 21 |  | Intervjuisanje ciljnih grupa | 2d | 2020-05-25 | 2020-05-26 |  | 7d |
| 22 |  | Analiziranje dobijenih podataka | 4d | 2020-05-28 | 2020-06-02 | 17 | 6d |
| 23 |  | Pisanje izveštaja o tržištu | 1d | 2020-06-03 | 2020-06-03 | 22 | 6d |
| 24 |  | Pisanje studije izvodljivosti | 2d | 2020-06-04 | 2020-06-05 | 23 | 6d |
| 25 |  | Praćenje napretka | 15d | 2020-05-25 | 2020-06-12 |  | 0d |
| 26 |  | Dokumentovanje aktivnosti | 1d | 2020-06-15 | 2020-06-15 | 25 | 0d |
| 27 | 1.1.4 | **Završetak analize tržišta** | 2d | 2020-06-16 | 2020-06-17 | 16 | 0d |
| 28 |  | Pisanje završnog izveštaja | 2d | 2020-06-16 | 2020-06-17 |  | 0d |
| 29 | 1.2 | **Analiza korisničkih zahteva** | 33d | 2020-06-18 | 2020-08-03 | 2 | 0d |
| 30 | 1.2.1 | **Iniciranje analize korisničkih zahteva** | 4d | 2020-06-18 | 2020-06-23 |  | 0d |
| 31 |  | Selekcija ljudi koji će raditi analizu | 2d | 2020-06-18 | 2020-06-19 |  | 0d |
| 32 |  | Kratak opis posla | 2d | 2020-06-18 | 2020-06-19 |  | 0d |
| 33 |  | Raspodela izabranih u timove | 1d | 2020-06-22 | 2020-06-22 | 31, 32 | 0d |
| 34 |  | Dokumentovanje aktivnosti | 1d | 2020-06-23 | 2020-06-23 | 33 | 0d |
| 35 | 1.2.2 | **Planiranje analize korisničkih zahteva** | 9d | 2020-06-24 | 2020-07-06 | 30 | 0d |
| 36 |  | Definisanje aktivnosti koje će se izvršiti u fazi realizacije | 3d | 2020-06-24 | 2020-06-26 | 30 | 0d |
| 37 |  | Podela aktivnosti po timovima | 1d | 2020-06-29 | 2020-06-29 | 36 | 0d |
| 38 | 1.2.2.3 | **Priprema za analizu korisničkih zahteva** | 4d | 2020-06-30 | 2020-07-03 |  | 0d |
| 39 |  | Pravljenje anketa | 2d | 2020-06-30 | 2020-07-01 | 37 | 0d |
| 40 |  | Instalacija i konfiguracija softvera za analizu prikupljenih podataka | 2d | 2020-07-02 | 2020-07-03 | 39 | 0d |
| 41 |  | Pisanje izveštaja o planiranju analize | 1d | 2020-07-06 | 2020-07-06 | 38 | 0d |
| 42 | 1.2.3 | **Realizacija analize korisničkih zahteva** | 19d | 2020-07-07 | 2020-07-31 | 35 | 0d |
| 43 |  | Formiranje ciljnih grupa | 2d | 2020-07-07 | 2020-07-08 |  | 0d |
| 44 |  | Nasumično izdvajanje ispitanika radi intervjuisanja | 1d | 2020-07-07 | 2020-07-07 |  | 1d |
| 45 | 1.2.3.3 | **Prikupljanje korisničkih zahteva** | 7d | 2020-07-09 | 2020-07-17 | 43, 44 | 0d |
| 46 |  | Anketiranje ciljnih grupa | 3d | 2020-07-09 | 2020-07-13 |  | 0d |
| 47 |  | Individualno intervjuisanje ispitanika | 2d | 2020-07-14 | 2020-07-15 | 46 | 0d |
| 48 |  | Formiranje spiska korisničkih zahteva | 2d | 2020-07-16 | 2020-07-17 | 47 | 0d |
| 49 | 1.2.3.4 | **Аnaliza korisničkih zahteva** | 8d | 2020-07-20 | 2020-07-29 | 45 | 0d |
| 50 |  | Analiza funkcionalnosti | 5d | 2020-07-20 | 2020-07-24 |  | 0d |
| 51 |  | Pisanje scenarija slučajeva korišćenja | 3d | 2020-07-27 | 2020-07-29 | 50 | 0d |
| 52 |  | Kreiranje izveštaja | 2d | 2020-07-30 | 2020-07-31 | 49 | 0d |
| 53 |  | Praćenje napretka | 15d | 2020-07-07 | 2020-07-27 |  | 4d |
| 54 | 1.2.4 | **Završetak analize korisničkih zahteva** | 1d | 2020-08-03 | 2020-08-03 | 42 | 0d |
| 55 |  | Pisanje završnog izveštaja | 1d | 2020-08-03 | 2020-08-03 |  | 0d |
| 56 |  | Dobijanje odobrenja od menadžmenta | 1d | 2020-08-04 | 2020-08-04 | 2, 29 | 0d |
| 57 |  | M1 - Završena analiza tržišta i svih korisničkih zahteva | 0d | 2020-08-04 | 2020-08-04 | 1 | 0d |
| 58 | 3 | **WP2 - Planiranje projekta** | 107d | 2020-08-05 | 2020-12-31 | 57 | 0d |
| 59 | 3.1 | **Pravljenje i organizacija rasporeda** | 27d | 2020-08-05 | 2020-09-10 |  | 0d |
| 60 |  | Definisanje zadataka, obima posla | 14d | 2020-08-05 | 2020-08-24 |  | 0d |
| 61 |  | Procena trajanja projektnih faza | 7d | 2020-08-25 | 2020-09-02 | 60 | 0d |
| 62 |  | Vremenski rasporediti faze, zadatke | 6d | 2020-09-03 | 2020-09-10 | 61 | 0d |
| 63 | 3.2 | **Planiranje resursa** | 17d | 2020-09-11 | 2020-10-05 | 59 | 0d |
| 64 |  | Određivanje broja radnika | 7d | 2020-09-11 | 2020-09-21 |  | 0d |
| 65 |  | Određivanje zahteva za opremom | 10d | 2020-09-22 | 2020-10-05 | 64 | 0d |
| 66 | 3.3 | **Planiranje budzeta** | 25d | 2020-10-06 | 2020-11-09 | 63 | 0d |
| 67 |  | Određivanje plata | 6d | 2020-10-06 | 2020-10-13 |  | 0d |
| 68 |  | Određivanje troškova za opremu | 8d | 2020-10-14 | 2020-10-23 | 67 | 0d |
| 69 |  | Određivanje ostalih troškova | 8d | 2020-10-26 | 2020-11-04 | 68 | 0d |
| 70 |  | Revizija i sumiranje troškova | 3d | 2020-11-05 | 2020-11-09 | 69 | 0d |

| ID | WBS | Task | Duration | Start | Finish | Predecessors | Total float |
| --- | --- | --- | --- | --- | --- | --- | --- |
| 71 |  | Planiranje rizika | 10d | 2020-11-10 | 2020-11-23 | 66 | 0d |
| 72 |  | Raspodela posla po participantima | 4d | 2020-11-24 | 2020-11-27 | 71 | 0d |
| 73 |  | Definisanje načina komunikacije | 6d | 2020-11-30 | 2020-12-07 | 72 | 0d |
| 74 |  | Definisanje mera kvaliteta i performansi | 12d | 2020-12-08 | 2020-12-23 | 73 | 0d |
| 75 |  | Dokumentovati projektni plan | 5d | 2020-12-24 | 2020-12-30 | 74 | 0d |
| 76 |  | Dobijanje odobrenja od menadžmenta | 1d | 2020-12-31 | 2020-12-31 | 75 | 0d |
| 77 |  | M2 - Završen plan projekta | 0d | 2020-12-31 | 2020-12-31 | 76 | 0d |
| 78 | 5 | **WP3 - Modelovanje arhitekture i dizajn sistema** | 105d | 2021-01-01 | 2021-05-27 | 77 | 0d |
| 79 | 5.1 | **Modelovanje i dizajn veb-portala** | 53d | 2021-01-01 | 2021-03-16 |  | 0d |
| 80 |  | Dizajniranje izgleda | 30d | 2021-01-01 | 2021-02-11 |  | 0d |
| 81 |  | UML projektovanje | 17d | 2021-02-12 | 2021-03-08 | 80 | 0d |
| 82 |  | Dokumentovanje aktivnosti | 6d | 2021-03-09 | 2021-03-16 | 81 | 0d |
| 83 | 5.2 | **Modelovanje i dizajn hardvera** | 48d | 2021-03-17 | 2021-05-21 | 79 | 0d |
| 84 |  | Dizajniranje hardvera | 25d | 2021-03-17 | 2021-04-20 |  | 0d |
| 85 |  | UML projektovanje | 17d | 2021-04-21 | 2021-05-13 | 84 | 0d |
| 86 |  | Dokumentovanje aktivnosti | 6d | 2021-05-14 | 2021-05-21 | 85 | 0d |
| 87 |  | Detaljan opis dizajna i arhitekture sistema | 4d | 2021-05-24 | 2021-05-27 | 83 | 0d |
| 88 |  | M3 - Završeno modelovanje sistema | 0d | 2021-05-27 | 2021-05-27 | 78 | 0d |
| 89 | 7 | **WP4 - Izrada prototipa veb-portala** | 61d | 2021-05-28 | 2021-08-20 | 88 | 32d |
| 90 | 7.1 | **Izrada prototipa** | 41d | 2021-05-28 | 2021-07-23 |  | 32d |
| 91 |  | Izrada stranice za korisnike | 21d | 2021-05-28 | 2021-06-25 |  | 32d |
| 92 |  | Izrada stranica za operatere | 15d | 2021-06-28 | 2021-07-16 | 91 | 32d |
| 93 |  | Integracija stranica za korisnike i operatere | 5d | 2021-07-19 | 2021-07-23 | 92 | 32d |
| 94 |  | Validacija prototipa | 15d | 2021-07-26 | 2021-08-13 | 90 | 32d |
| 95 |  | Dokumentovanje aktivnosti | 5d | 2021-08-16 | 2021-08-20 | 94 | 32d |
| 96 |  | M4 - Završen prototip veb-portala | 0d | 2021-08-20 | 2021-08-20 | 89 | 32d |
| 97 | 9 | **WP5 - Izrada prototipa hardvera** | 87d | 2021-05-28 | 2021-09-27 | 88 | 0d |
| 98 | 9.1 | **Izrada prototipa** | 65d | 2021-05-28 | 2021-08-26 |  | 0d |
| 99 |  | Izrada prototipa RFID kartice | 30d | 2021-05-28 | 2021-07-08 |  | 0d |
| 100 |  | Izrada čitača i upisivača | 25d | 2021-07-09 | 2021-08-12 | 99 | 0d |
| 101 |  | Integracija prototipa sa čitačima i upisivačima | 10d | 2021-08-13 | 2021-08-26 | 100 | 0d |
| 102 |  | Validacija prototipa | 17d | 2021-08-27 | 2021-09-20 | 98 | 0d |
| 103 |  | Dokumentovanje aktivnosti | 5d | 2021-09-21 | 2021-09-27 | 102 | 0d |
| 104 |  | M5 - Završen prototip kartice | 0d | 2021-09-27 | 2021-09-27 | 97 | 0d |
| 105 | 11 | **WP6 - Implementacija hardvera** | 170d | 2021-09-28 | 2022-05-23 | 104 | 0d |
| 106 |  | Izrada čitača i upisivača | 20d | 2021-09-28 | 2021-10-25 |  | 0d |
| 107 |  | Izrada kartice | 40d | 2021-10-26 | 2021-12-20 | 106 | 0d |
| 108 |  | Implementacija biznis logike | 30d | 2021-12-21 | 2022-01-31 | 107 | 0d |
| 109 |  | Implementacija bezbednosnih protokola | 35d | 2022-02-01 | 2022-03-21 | 108 | 0d |
| 110 | 11.5 | **Integracija** | 40d | 2022-03-22 | 2022-05-16 | 109 | 0d |
| 111 |  | Integracija kartice, čitača i upisivača | 20d | 2022-03-22 | 2022-04-18 | 108 | 0d |
| 112 |  | Integracija kartice i sigurnosnih protokola | 20d | 2022-04-19 | 2022-05-16 | 111 | 0d |
| 113 |  | Dokumentacija svih aktivnosti | 5d | 2022-05-17 | 2022-05-23 | 110 | 0d |
| 114 |  | M6 - Završena implementacija kartice | 0d | 2022-05-23 | 2022-05-23 | 105 | 0d |
| 115 | 13 | **WP7 - Implementacija veb-portala** | 145d | 2021-08-23 | 2022-03-11 | 96 | 32d |
| 116 |  | Implementacija frontenda | 45d | 2021-08-23 | 2021-10-22 |  | 32d |
| 117 |  | Implementacija backenda | 45d | 2021-10-25 | 2021-12-24 | 116 | 32d |
| 118 |  | Implementacija bezbednosnih protokola | 35d | 2021-12-27 | 2022-02-11 | 117 | 52d |
| 119 | 13.4 | **Integracija** | 45d | 2021-12-27 | 2022-02-25 |  | 32d |
| 120 |  | Integracija frontenda i bekenda | 25d | 2021-12-27 | 2022-01-28 | 117 | 32d |
| 121 |  | Integracija sa bezbednosnim protokolima | 20d | 2022-01-31 | 2022-02-25 | 120 | 32d |
| 122 |  | Dokumentacija svih aktivnosti | 10d | 2022-02-28 | 2022-03-11 | 119 | 32d |
| 123 |  | M7 - Završena implementacija veb-portala | 0d | 2022-03-11 | 2022-03-11 | 115 | 32d |
| 124 | 15 | **WP8 - Testiranje hardvera** | 66d | 2022-05-24 | 2022-08-23 | 114 | 0d |
| 125 |  | Pisanje testova | 10d | 2022-05-24 | 2022-06-06 |  | 0d |
| 126 |  | Pokretanje testova | 20d | 2022-06-07 | 2022-07-04 | 125 | 0d |
| 127 |  | Ispravljanje pronađenih defekata | 30d | 2022-07-05 | 2022-08-15 | 126 | 0d |
| 128 |  | Kreiranje izveštaja | 6d | 2022-08-16 | 2022-08-23 | 127 | 0d |
| 129 |  | M8 - Završeno testiranje hardvera | 0d | 2022-08-23 | 2022-08-23 | 124 | 110d |
| 130 | 17 | **WP9 - Testiranje softvera** | 85d | 2022-03-14 | 2022-07-08 | 123 | 32d |
| 131 |  | Pisanje testova | 15d | 2022-03-14 | 2022-04-01 |  | 32d |
| 132 |  | Pokretanje testova | 25d | 2022-04-04 | 2022-05-06 | 131 | 32d |
| 133 |  | Ispravljanje pronađenih defekata | 35d | 2022-05-09 | 2022-06-24 | 132 | 32d |
| 134 |  | Kreiranje izveštaja | 10d | 2022-06-27 | 2022-07-08 | 133 | 32d |
| 135 |  | M9 - Završeno testiranje softvera | 0d | 2022-07-08 | 2022-07-08 | 130 | 32d |
| 136 | 19 | **WP10 - Evaluacija i disiminacija** | 110d | 2022-08-24 | 2023-01-24 | 135, 124 | 0d |
| 137 |  | Prikupljanje utisaka korisnika | 20d | 2022-08-24 | 2022-09-20 |  | 0d |
| 138 |  | Kreiranje marketinškog plana | 10d | 2022-09-21 | 2022-10-04 | 137 | 0d |
| 139 |  | Priprema reklamnog materijala | 15d | 2022-10-05 | 2022-10-25 | 138 | 0d |
| 140 | 19.4 | **Promovisanje proizvoda** | 55d | 2022-10-26 | 2023-01-10 | 139 | 0d |

| ID | WBS | Task | Duration | Start | Finish | Predecessors | Total float | Constraint |
| --- | --- | --- | --- | --- | --- | --- | --- | --- |
| 141 |  | Internet marketing | 55d | 2022-10-26 | 2023-01-10 |  | 0d |  |
| 142 |  | TV marketing | 55d | 2022-10-26 | 2023-01-10 |  | 0d |  |
| 143 |  | Učestvovanje na sajmovima i konferencijama | 55d | 2022-10-26 | 2023-01-10 |  | 0d |  |
| 144 |  | Izveštaji i analizirane statistike | 10d | 2023-01-11 | 2023-01-24 | 140 | 0d |  |
| 145 |  | M10 - Završena evaluacija i disiminacija | 0d | 2023-01-24 | 2023-01-24 | 136 | 0d |  |
| 146 | 21 | **WP11 - Upravljanje projektom** | 712d | 2020-05-04 | 2023-01-24 | 1SS | 0d |  |
| 147 |  | Uspravljanje rizicima | 711d | 2020-05-04 | 2023-01-23 | 1SS | 1d |  |
| 148 |  | Upravljanje komunikacijom | 711d | 2020-05-04 | 2023-01-23 | 1SS | 1d |  |
| 149 |  | Upravljanje merama kvaliteta i postupcima | 711d | 2020-05-04 | 2023-01-23 | 1SS | 1d |  |
| 150 |  | Upravljanje obimom posla | 173d | 2020-05-05 | 2020-12-31 | 58FF | 538d |  |
| 151 |  | Upravljanje vremenom | 173d | 2020-05-05 | 2020-12-31 | 58FF | 538d |  |
| 152 |  | Upravljanje rashodima | 107d | 2020-08-05 | 2020-12-31 | 58FF | 538d |  |
| 153 |  | Upravljanje ljudskim resursima | 107d | 2020-08-05 | 2020-12-31 | 58FF | 538d |  |
| 154 | 21.8 | **Sastanci** | 699d | 2020-05-04 | 2023-01-05 |  | 13d |  |
| 155 | 21.8.1 | **Mesečni sastanak** | 699d | 2020-05-04 | 2023-01-05 |  | 13d |  |
| 156 |  | Mesečni sastanak 1 | 1d | 2020-05-04 | 2020-05-04 |  | 711d | start no earlier than 2019-05-01 |
| 157 |  | Mesečni sastanak 2 | 1d | 2020-06-04 | 2020-06-04 |  | 688d | start no earlier than 2020-06-04 |
| 158 |  | Mesečni sastanak 3 | 1d | 2020-07-06 | 2020-07-06 |  | 666d | start no earlier than 2020-07-06 |
| 159 |  | Mesečni sastanak 4 | 1d | 2020-08-04 | 2020-08-04 |  | 645d | start no earlier than 2020-08-04 |
| 160 |  | Mesečni sastanak 5 | 1d | 2020-09-04 | 2020-09-04 |  | 622d | start no earlier than 2020-09-04 |
| 161 |  | Mesečni sastanak 6 | 1d | 2020-10-05 | 2020-10-05 |  | 601d | start no earlier than 2020-10-05 |
| 162 |  | Mesečni sastanak 7 | 1d | 2020-11-04 | 2020-11-04 |  | 579d | start no earlier than 2020-11-04 |
| 163 |  | Mesečni sastanak 8 | 1d | 2020-12-04 | 2020-12-04 |  | 557d | start no earlier than 2020-12-04 |
| 164 |  | Mesečni sastanak 9 | 1d | 2021-01-04 | 2021-01-04 |  | 536d | start no earlier than 2021-01-04 |
| 165 |  | Mesečni sastanak 10 | 1d | 2021-02-04 | 2021-02-04 |  | 513d | start no earlier than 2021-02-04 |
| 166 |  | Mesečni sastanak 11 | 1d | 2021-03-04 | 2021-03-04 |  | 493d | start no earlier than 2021-03-04 |
| 167 |  | Mesečni sastanak 12 | 1d | 2021-04-05 | 2021-04-05 |  | 471d | start no earlier than 2021-04-05 |
| 168 |  | Mesečni sastanak 13 | 1d | 2021-05-04 | 2021-05-04 |  | 450d | start no earlier than 2021-05-04 |
| 169 |  | Mesečni sastanak 14 | 1d | 2021-06-04 | 2021-06-04 |  | 427d | start no earlier than 2021-06-04 |
| 170 |  | Mesečni sastanak 15 | 1d | 2021-07-05 | 2021-07-05 |  | 406d | start no earlier than 2021-07-05 |
| 171 |  | Mesečni sastanak 16 | 1d | 2021-08-04 | 2021-08-04 |  | 384d | start no earlier than 2021-08-04 |
| 172 |  | Mesečni sastanak 17 | 1d | 2021-09-06 | 2021-09-06 |  | 361d | start no earlier than 2021-09-06 |
| 173 |  | Mesečni sastanak 18 | 1d | 2021-10-04 | 2021-10-04 |  | 341d | start no earlier than 2021-10-04 |
| 174 |  | Mesečni sastanak 19 | 1d | 2021-11-04 | 2021-11-04 |  | 318d | start no earlier than 2021-11-04 |
| 175 |  | Mesečni sastanak 20 | 1d | 2021-12-06 | 2021-12-06 |  | 296d | start no earlier than 2021-12-06 |
| 176 |  | Mesečni sastanak 21 | 1d | 2022-01-04 | 2022-01-04 |  | 275d | start no earlier than 2022-01-04 |
| 177 |  | Mesečni sastanak 22 | 1d | 2022-02-04 | 2022-02-04 |  | 252d | start no earlier than 2022-02-04 |
| 178 |  | Mesečni sastanak 23 | 1d | 2022-03-04 | 2022-03-04 |  | 232d | start no earlier than 2022-03-04 |
| 179 |  | Mesečni sastanak 24 | 1d | 2022-04-04 | 2022-04-04 |  | 211d | start no earlier than 2022-04-04 |
| 180 |  | Mesečni sastanak 25 | 1d | 2022-05-04 | 2022-05-04 |  | 189d | start no earlier than 2022-05-04 |
| 181 |  | Mesečni sastanak 26 | 1d | 2022-06-06 | 2022-06-06 |  | 166d | start no earlier than 2022-06-06 |
| 182 |  | Mesečni sastanak 27 | 1d | 2022-07-04 | 2022-07-04 |  | 146d | start no earlier than 2022-07-04 |
| 183 |  | Mesečni sastanak 28 | 1d | 2022-08-04 | 2022-08-04 |  | 123d | start no earlier than 2022-08-04 |
| 184 |  | Mesečni sastanak 29 | 1d | 2022-09-05 | 2022-09-05 |  | 101d | start no earlier than 2022-09-05 |
| 185 |  | Mesečni sastanak 30 | 1d | 2022-10-04 | 2022-10-04 |  | 80d | start no earlier than 2022-10-04 |
| 186 |  | Mesečni sastanak 31 | 1d | 2022-11-04 | 2022-11-04 |  | 57d | start no earlier than 2022-11-04 |
| 187 |  | Mesečni sastanak 32 | 1d | 2022-12-05 | 2022-12-05 |  | 36d | start no earlier than 2022-12-05 |
| 188 |  | Mesečni sastanak 33 | 1d | 2023-01-05 | 2023-01-05 |  | 13d | start no earlier than 2023-01-05 |
| 189 |  | Zatvaranje projekta | 10d | 2023-01-11 | 2023-01-24 | 136FF | 0d |  |
| 190 |  | M11 - Završen projekat | 0d | 2023-01-24 | 2023-01-24 | 189 | 0d |  |

## Version 2 (saved 2020-06-21)

Note of the change: U idejnom resenju namesteni datumi, u projektnom planu namesteno delimicno preklapanje testiranja i kodiranja

Last finish 2023-01-24 → 2022-11-22 (-63d).

Removed: 187 Mesečni sastanak 32; 188 Mesečni sastanak 33

Changed:

| ID | Task | Start | Finish | Duration | Total float | Predecessors | Other |
| --- | --- | --- | --- | --- | --- | --- | --- |
| 124 | **WP8 - Testiranje hardvera** | 2022-05-24 → 2022-03-22 (-63d) | 2022-08-23 → 2022-06-21 (-63d) |  |  | 114 → 109 |  |
| 125 | Pisanje testova | 2022-05-24 → 2022-03-22 (-63d) | 2022-06-06 → 2022-04-04 (-63d) |  |  |  |  |
| 126 | Pokretanje testova | 2022-06-07 → 2022-04-05 (-63d) | 2022-07-04 → 2022-05-02 (-63d) |  |  |  |  |
| 127 | Ispravljanje pronađenih defekata | 2022-07-05 → 2022-05-03 (-63d) | 2022-08-15 → 2022-06-13 (-63d) |  |  |  | resources UPC Technician 1; ETF Expert 1; IOM Technician 1 [50%] → ETF Expert 1; IOM Technician 1 [50%]; UPC Technician 3 |
| 128 | Kreiranje izveštaja | 2022-08-16 → 2022-06-14 (-63d) | 2022-08-23 → 2022-06-21 (-63d) |  |  |  |  |
| 129 | M8 - Završeno testiranje hardvera | 2022-08-23 → 2022-06-21 (-63d) | 2022-08-23 → 2022-06-21 (-63d) |  | 110d → 154d |  |  |
| 130 | **WP9 - Testiranje softvera** | 2022-03-14 → 2022-02-14 (-28d) | 2022-07-08 → 2022-06-10 (-28d) |  | 32d → 7d | 123 → 118 |  |
| 131 | Pisanje testova | 2022-03-14 → 2022-02-14 (-28d) | 2022-04-01 → 2022-03-04 (-28d) |  | 32d → 51d |  |  |
| 132 | Pokretanje testova | 2022-04-04 → 2022-03-07 (-28d) | 2022-05-06 → 2022-04-08 (-28d) |  | 32d → 51d |  |  |
| 133 | Ispravljanje pronađenih defekata | 2022-05-09 → 2022-04-11 (-28d) | 2022-06-24 → 2022-05-27 (-28d) |  | 32d → 51d |  |  |
| 134 | Kreiranje izveštaja | 2022-06-27 → 2022-05-30 (-28d) | 2022-07-08 → 2022-06-10 (-28d) |  | 32d → 51d |  |  |
| 135 | M9 - Završeno testiranje softvera | 2022-07-08 → 2022-06-10 (-28d) | 2022-07-08 → 2022-06-10 (-28d) |  | 32d → 51d |  |  |
| 136 | **WP10 - Evaluacija i disiminacija** | 2022-08-24 → 2022-06-22 (-63d) | 2023-01-24 → 2022-11-22 (-63d) |  |  |  |  |
| 137 | Prikupljanje utisaka korisnika | 2022-08-24 → 2022-06-22 (-63d) | 2022-09-20 → 2022-07-19 (-63d) |  |  |  |  |
| 138 | Kreiranje marketinškog plana | 2022-09-21 → 2022-07-20 (-63d) | 2022-10-04 → 2022-08-02 (-63d) |  |  |  |  |
| 139 | Priprema reklamnog materijala | 2022-10-05 → 2022-08-03 (-63d) | 2022-10-25 → 2022-08-23 (-63d) |  |  |  |  |
| 140 | **Promovisanje proizvoda** | 2022-10-26 → 2022-08-24 (-63d) | 2023-01-10 → 2022-11-08 (-63d) |  |  |  |  |
| 141 | Internet marketing | 2022-10-26 → 2022-08-24 (-63d) | 2023-01-10 → 2022-11-08 (-63d) |  |  |  |  |
| 142 | TV marketing | 2022-10-26 → 2022-08-24 (-63d) | 2023-01-10 → 2022-11-08 (-63d) |  |  |  |  |
| 143 | Učestvovanje na sajmovima i konferencijama | 2022-10-26 → 2022-08-24 (-63d) | 2023-01-10 → 2022-11-08 (-63d) |  |  |  |  |
| 144 | Izveštaji i analizirane statistike | 2023-01-11 → 2022-11-09 (-63d) | 2023-01-24 → 2022-11-22 (-63d) |  |  |  |  |
| 145 | M10 - Završena evaluacija i disiminacija | 2023-01-24 → 2022-11-22 (-63d) | 2023-01-24 → 2022-11-22 (-63d) |  |  |  |  |
| 146 | **WP11 - Upravljanje projektom** |  | 2023-01-24 → 2022-11-22 (-63d) | 712d → 667d |  |  |  |
| 147 | Uspravljanje rizicima |  | 2023-01-23 → 2022-11-21 (-63d) | 711d → 666d |  |  |  |
| 148 | Upravljanje komunikacijom |  | 2023-01-23 → 2022-11-21 (-63d) | 711d → 666d |  |  |  |
| 149 | Upravljanje merama kvaliteta i postupcima |  | 2023-01-23 → 2022-11-21 (-63d) | 711d → 666d |  |  |  |
| 154 | **Sastanci** |  | 2023-01-05 → 2022-11-04 (-62d) | 699d → 655d | 13d → 12d |  |  |
| 155 | **Mesečni sastanak** |  | 2023-01-05 → 2022-11-04 (-62d) | 699d → 655d | 13d → 12d |  |  |
| 187 | Zatvaranje projekta | 2023-01-11 → 2022-11-09 (-63d) | 2023-01-24 → 2022-11-22 (-63d) |  |  |  |  |
| 188 | M11 - Završen projekat | 2023-01-24 → 2022-11-22 (-63d) | 2023-01-24 → 2022-11-22 (-63d) |  |  |  |  |
