# MIS Projketni Plan

How a schedule from MS Project changed from version to version. A marks actual dates.

## Version 1 (saved 2020-05-11)

Note of the change: Merge pull request #13 from natalijamitic/master

| ID | WBS | Task | Duration | Start | Finish | Predecessors | Total float |
| --- | --- | --- | --- | --- | --- | --- | --- |
| 1 | 1 | **WP1 - Analiza tržišta i korisničkih zahteva** | 66d | 2020-05-04 | 2020-08-03 |  | 0d |
| 2 | 1.1 | **Analiza tržišta** | 32d | 2020-05-04 | 2020-06-16 |  | 0d |
| 3 | 1.1.1 | **Iniciranje analize tržišta** | 4d | 2020-05-04 | 2020-05-07 |  | 0d |
| 4 |  | Selekcija ljudi koji će raditi analizu | 2d | 2020-05-04 | 2020-05-05 |  |  |
| 5 |  | Kratak opis posla | 2d | 2020-05-04 | 2020-05-05 |  |  |
| 6 |  | Raspodela izabranih u timove | 1d | 2020-05-06 | 2020-05-06 | 4, 5 |  |
| 7 |  | Dokumentovanje aktivnosti | 1d | 2020-05-07 | 2020-05-07 | 6 |  |
| 8 | 1.1.2 | **Planiranje analize tržišta** | 10d | 2020-05-07 | 2020-05-21 | 3 | 0d |
| 9 |  | Definisanje aktivnosti koje će se izvršiti u fazi realizacije | 3d | 2020-05-07 | 2020-05-12 |  |  |
| 10 |  | Podela aktivnosti po timovima | 1d | 2020-05-13 | 2020-05-13 | 9 |  |
| 11 | 1.1.2.3 | **Priprema za analizu tržišta** | 5d | 2020-05-14 | 2020-05-20 |  | 0d |
| 12 |  | Nalaženje pouzdanih izvora informacija | 2d | 2020-05-14 | 2020-05-15 | 10 |  |
| 13 |  | Pravljenje anketa | 3d | 2020-05-14 | 2020-05-18 | 10 |  |
| 14 |  | Instalacija i konfiguracija softvera za analizu prikupljenih podataka | 2d | 2020-05-19 | 2020-05-20 | 13 |  |
| 15 |  | Pisanje izveštaja o planiranju analize | 2d | 2020-05-20 | 2020-05-21 | 11 |  |
| 16 | 1.1.3 | **Realizacija analize tržišta** | 16d | 2020-05-22 | 2020-06-12 | 8 | 0d |
| 17 | 1.1.3.1 | **Prikupljanje podataka** | 3d | 2020-05-22 | 2020-05-26 |  | 6d |
| 18 |  | Prikupljanje podataka o sličnim projektima | 3d | 2020-05-22 | 2020-05-26 |  | 6d |
| 19 |  | Prikupljanje podataka sa odgovarajućih sajtova | 3d | 2020-05-22 | 2020-05-26 |  | 6d |
| 20 |  | Formiranje ciljnih grupa | 2d | 2020-05-22 | 2020-05-25 |  | 7d |
| 21 |  | Intervjuisanje ciljnih grupa | 2d | 2020-05-22 | 2020-05-25 |  | 7d |
| 22 |  | Analiziranje dobijenih podataka | 4d | 2020-05-27 | 2020-06-01 | 17 | 6d |
| 23 |  | Pisanje izveštaja o tržištu | 1d | 2020-06-02 | 2020-06-02 | 22 | 6d |
| 24 |  | Pisanje studije izvodljivosti | 2d | 2020-06-03 | 2020-06-04 | 23 | 6d |
| 25 |  | Praćenje napretka | 15d | 2020-05-22 | 2020-06-11 |  | 0d |
| 26 |  | Dokumentovanje aktivnosti | 1d | 2020-06-12 | 2020-06-12 | 25 | 0d |
| 27 | 1.1.4 | **Završetak analize tržišta** | 2d | 2020-06-15 | 2020-06-16 | 16 | 0d |
| 28 |  | Pisanje završnog izveštaja | 2d | 2020-06-15 | 2020-06-16 |  | 0d |
| 29 | 1.2 | **Analiza korisničkih zahteva** | 33d | 2020-06-17 | 2020-07-31 | 2 | 0d |
| 30 | 1.2.1 | **Iniciranje analize korisničkih zahteva** | 4d | 2020-06-17 | 2020-06-22 |  | 0d |
| 31 |  | Selekcija ljudi koji će raditi analizu | 2d | 2020-06-17 | 2020-06-18 |  | 0d |
| 32 |  | Kratak opis posla | 2d | 2020-06-17 | 2020-06-18 |  | 0d |
| 33 |  | Raspodela izabranih u timove | 1d | 2020-06-19 | 2020-06-19 | 31, 32 | 0d |
| 34 |  | Dokumentovanje aktivnosti | 1d | 2020-06-22 | 2020-06-22 | 33 | 0d |
| 35 | 1.2.2 | **Planiranje analize korisničkih zahteva** | 9d | 2020-06-23 | 2020-07-03 | 30 | 0d |
| 36 |  | Definisanje aktivnosti koje će se izvršiti u fazi realizacije | 3d | 2020-06-23 | 2020-06-25 | 30 | 0d |
| 37 |  | Podela aktivnosti po timovima | 1d | 2020-06-26 | 2020-06-26 | 36 | 0d |
| 38 | 1.2.2.3 | **Priprema za analizu korisničkih zahteva** | 4d | 2020-06-29 | 2020-07-02 |  | 0d |
| 39 |  | Pravljenje anketa | 2d | 2020-06-29 | 2020-06-30 | 37 | 0d |
| 40 |  | Instalacija i konfiguracija softvera za analizu prikupljenih podataka | 2d | 2020-07-01 | 2020-07-02 | 39 | 0d |
| 41 |  | Pisanje izveštaja o planiranju analize | 1d | 2020-07-03 | 2020-07-03 | 38 | 0d |
| 42 | 1.2.3 | **Realizacija analize korisničkih zahteva** | 19d | 2020-07-06 | 2020-07-30 | 35 | 0d |
| 43 |  | Formiranje ciljnih grupa | 2d | 2020-07-06 | 2020-07-07 |  | 0d |
| 44 |  | Nasumično izdvajanje ispitanika radi intervjuisanja | 1d | 2020-07-06 | 2020-07-06 |  | 1d |
| 45 | 1.2.3.3 | **Prikupljanje korisničkih zahteva** | 7d | 2020-07-08 | 2020-07-16 | 43, 44 | 0d |
| 46 |  | Anketiranje ciljnih grupa | 3d | 2020-07-08 | 2020-07-10 |  | 0d |
| 47 |  | Individualno intervjuisanje ispitanika | 2d | 2020-07-13 | 2020-07-14 | 46 | 0d |
| 48 |  | Formiranje spiska korisničkih zahteva | 2d | 2020-07-15 | 2020-07-16 | 47 | 0d |
| 49 | 1.2.3.4 | **Аnaliza korisničkih zahteva** | 8d | 2020-07-17 | 2020-07-28 | 45 | 0d |
| 50 |  | Analiza funkcionalnosti | 5d | 2020-07-17 | 2020-07-23 |  | 0d |
| 51 |  | Pisanje scenarija slučajeva korišćenja | 3d | 2020-07-24 | 2020-07-28 | 50 | 0d |
| 52 |  | Kreiranje izveštaja | 2d | 2020-07-29 | 2020-07-30 | 49 | 0d |
| 53 |  | Praćenje napretka | 15d | 2020-07-06 | 2020-07-24 |  | 4d |
| 54 | 1.2.4 | **Završetak analize korisničkih zahteva** | 1d | 2020-07-31 | 2020-07-31 | 42 | 0d |
| 55 |  | Pisanje završnog izveštaja | 1d | 2020-07-31 | 2020-07-31 |  | 0d |
| 56 |  | Dobijanje odobrenja od menadžmenta | 1d | 2020-08-03 | 2020-08-03 | 2, 29 | 0d |
| 57 |  | M1 - Završena analiza tržišta i svih korisničkih zahteva | 0d | 2020-08-03 | 2020-08-03 | 1 | 0d |
| 58 | 3 | **WP2 - Planiranje projekta** | 107d | 2020-08-04 | 2020-12-30 | 57 | 0d |
| 59 | 3.1 | **Pravljenje i organizacija rasporeda** | 27d | 2020-08-04 | 2020-09-09 |  | 0d |
| 60 |  | Definisanje zadataka, obima posla | 14d | 2020-08-04 | 2020-08-21 |  | 0d |
| 61 |  | Procena trajanja projektnih faza | 7d | 2020-08-24 | 2020-09-01 | 60 | 0d |
| 62 |  | Vremenski rasporediti faze, zadatke | 6d | 2020-09-02 | 2020-09-09 | 61 | 0d |
| 63 | 3.2 | **Planiranje resursa** | 17d | 2020-09-10 | 2020-10-02 | 59 | 0d |
| 64 |  | Određivanje broja radnika | 7d | 2020-09-10 | 2020-09-18 |  | 0d |
| 65 |  | Određivanje zahteva za opremom | 10d | 2020-09-21 | 2020-10-02 | 64 | 0d |
| 66 | 3.3 | **Planiranje budzeta** | 25d | 2020-10-05 | 2020-11-06 | 63 | 0d |
| 67 |  | Određivanje plata | 6d | 2020-10-05 | 2020-10-12 |  | 0d |
| 68 |  | Određivanje troškova za opremu | 8d | 2020-10-13 | 2020-10-22 | 67 | 0d |
| 69 |  | Određivanje ostalih troškova | 8d | 2020-10-23 | 2020-11-03 | 68 | 0d |
| 70 |  | Revizija i sumiranje troškova | 3d | 2020-11-04 | 2020-11-06 | 69 | 0d |

| ID | WBS | Task | Duration | Start | Finish | Predecessors | Total float |
| --- | --- | --- | --- | --- | --- | --- | --- |
| 71 |  | Planiranje rizika | 10d | 2020-11-09 | 2020-11-20 | 66 | 0d |
| 72 |  | Raspodela posla po participantima | 4d | 2020-11-23 | 2020-11-26 | 71 | 0d |
| 73 |  | Definisanje načina komunikacije | 6d | 2020-11-27 | 2020-12-04 | 72 | 0d |
| 74 |  | Definisanje mera kvaliteta i performansi | 12d | 2020-12-07 | 2020-12-22 | 73 | 0d |
| 75 |  | Dokumentovati projektni plan | 5d | 2020-12-23 | 2020-12-29 | 74 | 0d |
| 76 |  | Dobijanje odobrenja od menadžmenta | 1d | 2020-12-30 | 2020-12-30 | 75 | 0d |
| 77 |  | M2 - Završen plan projekta | 0d | 2020-12-30 | 2020-12-30 | 76 | 0d |
| 78 | 5 | **WP3 - Modelovanje arhitekture i dizajn sistema** | 105d | 2020-12-31 | 2021-05-26 | 77 | 0d |
| 79 | 5.1 | **Modelovanje i dizajn veb-portala** | 53d | 2020-12-31 | 2021-03-15 |  | 0d |
| 80 |  | Dizajniranje izgleda | 30d | 2020-12-31 | 2021-02-10 |  | 0d |
| 81 |  | UML projektovanje | 17d | 2021-02-11 | 2021-03-05 | 80 | 0d |
| 82 |  | Dokumentovanje aktivnosti | 6d | 2021-03-08 | 2021-03-15 | 81 | 0d |
| 83 | 5.2 | **Modelovanje i dizajn hardvera** | 48d | 2021-03-16 | 2021-05-20 | 79 | 0d |
| 84 |  | Dizajniranje hardvera | 25d | 2021-03-16 | 2021-04-19 |  | 0d |
| 85 |  | UML projektovanje | 17d | 2021-04-20 | 2021-05-12 | 84 | 0d |
| 86 |  | Dokumentovanje aktivnosti | 6d | 2021-05-13 | 2021-05-20 | 85 | 0d |
| 87 |  | Detaljan opis dizajna i arhitekture sistema | 4d | 2021-05-21 | 2021-05-26 | 83 | 0d |
| 88 |  | M3 - Završeno modelovanje sistema | 0d | 2021-05-26 | 2021-05-26 | 78 | 0d |
| 89 | 7 | **WP4 - Izrada prototipa veb-portala** | 61d | 2021-05-27 | 2021-08-19 | 88 | 32d |
| 90 | 7.1 | **Izrada prototipa** | 41d | 2021-05-27 | 2021-07-22 |  | 32d |
| 91 |  | Izrada stranice za korisnike | 21d | 2021-05-27 | 2021-06-24 |  | 32d |
| 92 |  | Izrada stranica za operatere | 15d | 2021-06-25 | 2021-07-15 | 91 | 32d |
| 93 |  | Integracija stranica za korisnike i operatere | 5d | 2021-07-16 | 2021-07-22 | 92 | 32d |
| 94 |  | Validacija prototipa | 15d | 2021-07-23 | 2021-08-12 | 90 | 32d |
| 95 |  | Dokumentovanje aktivnosti | 5d | 2021-08-13 | 2021-08-19 | 94 | 32d |
| 96 |  | M4 - Završen prototip veb-portala | 0d | 2021-08-19 | 2021-08-19 | 89 | 32d |
| 97 | 9 | **WP5 - Izrada prototipa hardvera** | 87d | 2021-05-27 | 2021-09-24 | 88 | 0d |
| 98 | 9.1 | **Izrada prototipa** | 65d | 2021-05-27 | 2021-08-25 |  | 0d |
| 99 |  | Izrada prototipa RFID kartice | 30d | 2021-05-27 | 2021-07-07 |  | 0d |
| 100 |  | Izrada čitača i upisivača | 25d | 2021-07-08 | 2021-08-11 | 99 | 0d |
| 101 |  | Integracija prototipa sa čitačima i upisivačima | 10d | 2021-08-12 | 2021-08-25 | 100 | 0d |
| 102 |  | Validacija prototipa | 17d | 2021-08-26 | 2021-09-17 | 98 | 0d |
| 103 |  | Dokumentovanje aktivnosti | 5d | 2021-09-20 | 2021-09-24 | 102 | 0d |
| 104 |  | M5 - Završen prototip kartice | 0d | 2021-09-24 | 2021-09-24 | 97 | 0d |
| 105 | 11 | **WP6 - Implementacija hardvera** | 170d | 2021-09-27 | 2022-05-20 | 104 | 0d |
| 106 |  | Izrada čitača i upisivača | 20d | 2021-09-27 | 2021-10-22 |  | 0d |
| 107 |  | Izrada kartice | 40d | 2021-10-25 | 2021-12-17 | 106 | 0d |
| 108 |  | Implementacija biznis logike | 30d | 2021-12-20 | 2022-01-28 | 107 | 0d |
| 109 |  | Implementacija bezbednosnih protokola | 35d | 2022-01-31 | 2022-03-18 | 108 | 0d |
| 110 | 11.5 | **Integracija** | 40d | 2022-03-21 | 2022-05-13 | 109 | 0d |
| 111 |  | Integracija kartice, čitača i upisivača | 20d | 2022-03-21 | 2022-04-15 | 108 | 0d |
| 112 |  | Integracija kartice i sigurnosnih protokola | 20d | 2022-04-18 | 2022-05-13 | 111 | 0d |
| 113 |  | Dokumentacija svih aktivnosti | 5d | 2022-05-16 | 2022-05-20 | 110 | 0d |
| 114 |  | M6 - Završena implementacija kartice | 0d | 2022-05-20 | 2022-05-20 | 105 | 0d |
| 115 | 13 | **WP7 - Implementacija veb-portala** | 145d | 2021-08-20 | 2022-03-10 | 96 | 32d |
| 116 |  | Implementacija frontenda | 45d | 2021-08-20 | 2021-10-21 |  | 32d |
| 117 |  | Implementacija backenda | 45d | 2021-10-22 | 2021-12-23 | 116 | 32d |
| 118 |  | Implementacija bezbednosnih protokola | 35d | 2021-12-24 | 2022-02-10 | 117 | 20d |
| 119 | 13.4 | **Integracija** | 45d | 2021-12-24 | 2022-02-24 |  | 32d |
| 120 |  | Integracija frontenda i bekenda | 25d | 2021-12-24 | 2022-01-27 | 117 | 32d |
| 121 |  | Integracija sa bezbednosnim protokolima | 20d | 2022-01-28 | 2022-02-24 | 120 | 32d |
| 122 |  | Dokumentacija svih aktivnosti | 10d | 2022-02-25 | 2022-03-10 | 119 | 32d |
| 123 |  | M7 - Završena implementacija veb-portala | 0d | 2022-03-10 | 2022-03-10 | 115 | 32d |
| 124 | 15 | **WP8 - Testiranje hardvera** | 66d | 2022-05-23 | 2022-08-22 | 114 | 0d |
| 125 |  | Pisanje testova | 10d | 2022-05-23 | 2022-06-03 |  | 0d |
| 126 |  | Pokretanje testova | 20d | 2022-06-06 | 2022-07-01 | 125 | 0d |
| 127 |  | Ispravljanje pronađenih defekata | 30d | 2022-07-04 | 2022-08-12 | 126 | 0d |
| 128 |  | Kreiranje izveštaja | 6d | 2022-08-15 | 2022-08-22 | 127 | 0d |
| 129 |  | M8 - Završeno testiranje hardvera | 0d | 2022-08-22 | 2022-08-22 | 124 | 78d |
| 130 | 17 | **WP9 - Testiranje softvera** | 85d | 2022-03-11 | 2022-07-07 | 123 | 32d |
| 131 |  | Pisanje testova | 15d | 2022-03-11 | 2022-03-31 |  | 32d |
| 132 |  | Pokretanje testova | 25d | 2022-04-01 | 2022-05-05 | 131 | 32d |
| 133 |  | Ispravljanje pronađenih defekata | 35d | 2022-05-06 | 2022-06-23 | 132 | 32d |
| 134 |  | Kreiranje izveštaja | 10d | 2022-06-24 | 2022-07-07 | 133 | 32d |
| 135 |  | M9 - Završeno testiranje softvera | 0d | 2022-07-07 | 2022-07-07 | 130 | 32d |
| 136 | 19 | **WP10 - Evaluacija i disiminacija** | 110d | 2022-08-23 | 2023-01-23 | 135, 124 | 0d |
| 137 |  | Prikupljanje utisaka korisnika | 20d | 2022-08-23 | 2022-09-19 |  | 0d |
| 138 |  | Kreiranje marketinškog plana | 10d | 2022-09-20 | 2022-10-03 | 137 | 0d |
| 139 |  | Priprema reklamnog materijala | 15d | 2022-10-04 | 2022-10-24 | 138 | 0d |
| 140 | 19.4 | **Promovisanje proizvoda** | 55d | 2022-10-25 | 2023-01-09 | 139 | 0d |

| ID | WBS | Task | Duration | Start | Finish | Predecessors | Total float | Constraint |
| --- | --- | --- | --- | --- | --- | --- | --- | --- |
| 141 |  | Internet marketing | 55d | 2022-10-25 | 2023-01-09 |  | 0d |  |
| 142 |  | TV marketing | 55d | 2022-10-25 | 2023-01-09 |  | 0d |  |
| 143 |  | Učestvovanje na sajmovima i konferencijama | 55d | 2022-10-25 | 2023-01-09 |  | 0d |  |
| 144 |  | Izveštaji i analizirane statistike | 10d | 2023-01-10 | 2023-01-23 | 140 | 0d |  |
| 145 |  | M10 - Završena evaluacija i disiminacija | 0d | 2023-01-23 | 2023-01-23 | 136 | 0d |  |
| 146 | 21 | **WP11 - Upravljanje projektom** | 711d? | 2020-05-04 | 2023-01-23 |  |  |  |
| 147 |  | Uspravljanje rizicima | 711d | 2020-05-04 | 2023-01-23 |  | 0d |  |
| 148 |  | Upravljanje komunikacijom | 711d | 2020-05-04 | 2023-01-23 |  | 0d |  |
| 149 |  | Upravljanje merama kvaliteta i postupcima | 711d | 2020-05-04 | 2023-01-23 |  | 0d |  |
| 150 |  | Upravljanje obimom posla | 173d | 2020-05-04 | 2020-12-30 | 58FF | 538d |  |
| 151 |  | Upravljanje vremenom | 173d | 2020-05-04 | 2020-12-30 | 58FF | 538d |  |
| 152 |  | Upravljanje rashodima | 107d | 2020-08-04 | 2020-12-30 | 58FF | 538d |  |
| 153 |  | Upravljanje ljudskim resursima | 107d | 2020-08-04 | 2020-12-30 | 58FF | 538d |  |
| 154 | 21.8 | **Sastanci** | 699d | 2020-05-04 | 2023-01-05 |  | 12d |  |
| 155 | 21.8.1 | **Mesečni sastanak** | 699d | 2020-05-04 | 2023-01-05 |  | 12d |  |
| 156 |  | Mesečni sastanak 1 | 1d | 2020-05-04 | 2020-05-04 |  | 710d | start no earlier than 2019-05-01 |
| 157 |  | Mesečni sastanak 2 | 1d | 2020-06-04 | 2020-06-04 |  | 687d | start no earlier than 2020-06-04 |
| 158 |  | Mesečni sastanak 3 | 1d | 2020-07-06 | 2020-07-06 |  | 665d | start no earlier than 2020-07-06 |
| 159 |  | Mesečni sastanak 4 | 1d | 2020-08-04 | 2020-08-04 |  | 644d | start no earlier than 2020-08-04 |
| 160 |  | Mesečni sastanak 5 | 1d | 2020-09-04 | 2020-09-04 |  | 621d | start no earlier than 2020-09-04 |
| 161 |  | Mesečni sastanak 6 | 1d | 2020-10-05 | 2020-10-05 |  | 600d | start no earlier than 2020-10-05 |
| 162 |  | Mesečni sastanak 7 | 1d | 2020-11-04 | 2020-11-04 |  | 578d | start no earlier than 2020-11-04 |
| 163 |  | Mesečni sastanak 8 | 1d | 2020-12-04 | 2020-12-04 |  | 556d | start no earlier than 2020-12-04 |
| 164 |  | Mesečni sastanak 9 | 1d | 2021-01-04 | 2021-01-04 |  | 535d | start no earlier than 2021-01-04 |
| 165 |  | Mesečni sastanak 10 | 1d | 2021-02-04 | 2021-02-04 |  | 512d | start no earlier than 2021-02-04 |
| 166 |  | Mesečni sastanak 11 | 1d | 2021-03-04 | 2021-03-04 |  | 492d | start no earlier than 2021-03-04 |
| 167 |  | Mesečni sastanak | 1d | 2021-04-05 | 2021-04-05 |  | 470d | start no earlier than 2021-04-05 |
| 168 |  | Mesečni sastanak 12 | 1d | 2021-05-04 | 2021-05-04 |  | 449d | start no earlier than 2021-05-04 |
| 169 |  | Mesečni sastanak 13 | 1d | 2021-06-04 | 2021-06-04 |  | 426d | start no earlier than 2021-06-04 |
| 170 |  | Mesečni sastanak 14 | 1d | 2021-07-05 | 2021-07-05 |  | 405d | start no earlier than 2021-07-05 |
| 171 |  | Mesečni sastanak 15 | 1d | 2021-08-04 | 2021-08-04 |  | 383d | start no earlier than 2021-08-04 |
| 172 |  | Mesečni sastanak 16 | 1d | 2021-09-06 | 2021-09-06 |  | 360d | start no earlier than 2021-09-06 |
| 173 |  | Mesečni sastanak 17 | 1d | 2021-10-04 | 2021-10-04 |  | 340d | start no earlier than 2021-10-04 |
| 174 |  | Mesečni sastanak 18 | 1d | 2021-11-04 | 2021-11-04 |  | 317d | start no earlier than 2021-11-04 |
| 175 |  | Mesečni sastanak 19 | 1d | 2021-12-06 | 2021-12-06 |  | 295d | start no earlier than 2021-12-06 |
| 176 |  | Mesečni sastanak 20 | 1d | 2022-01-04 | 2022-01-04 |  | 274d | start no earlier than 2022-01-04 |
| 177 |  | Mesečni sastanak 21 | 1d | 2022-02-04 | 2022-02-04 |  | 251d | start no earlier than 2022-02-04 |
| 178 |  | Mesečni sastanak 22 | 1d | 2022-03-04 | 2022-03-04 |  | 231d | start no earlier than 2022-03-04 |
| 179 |  | Mesečni sastanak 23 | 1d | 2022-04-04 | 2022-04-04 |  | 210d | start no earlier than 2022-04-04 |
| 180 |  | Mesečni sastanak 24 | 1d | 2022-05-04 | 2022-05-04 |  | 188d | start no earlier than 2022-05-04 |
| 181 |  | Mesečni sastanak 25 | 1d | 2022-06-06 | 2022-06-06 |  | 165d | start no earlier than 2022-06-06 |
| 182 |  | Mesečni sastanak 26 | 1d | 2022-07-04 | 2022-07-04 |  | 145d | start no earlier than 2022-07-04 |
| 183 |  | Mesečni sastanak 27 | 1d | 2022-08-04 | 2022-08-04 |  | 122d | start no earlier than 2022-08-04 |
| 184 |  | Mesečni sastanak 28 | 1d | 2022-09-05 | 2022-09-05 |  | 100d | start no earlier than 2022-09-05 |
| 185 |  | Mesečni sastanak | 1d | 2022-10-04 | 2022-10-04 |  | 79d | start no earlier than 2022-10-04 |
| 186 |  | Mesečni sastanak | 1d | 2020-11-04 | 2020-11-04 |  | 578d | start no earlier than 2020-11-04 |
| 187 |  | Mesečni sastanak | 1d | 2022-12-05 | 2022-12-05 |  | 35d | start no earlier than 2022-12-05 |
| 188 |  | Mesečni sastanak | 1d | 2023-01-05 | 2023-01-05 |  | 12d | start no earlier than 2023-01-05 |
| 189 |  | Zatvaranje projekta | 10d | 2023-01-10 | 2023-01-23 | 136FF | 0d |  |
| 190 |  | M11 - Završen projekat | 0d | 2023-01-23 | 2023-01-23 | 189 | 0d |  |

## Version 2 (saved 2020-05-11)

Note of the change: Numerisani mesecni sastanci

Last finish stays 2023-01-23.

Added:

| ID | Task | Duration | Start | Finish | Constraint |
| --- | --- | --- | --- | --- | --- |
| 184 | Mesečni sastanak 29 | 1d | 2022-09-05 | 2022-09-05 | start no earlier than 2022-09-05 |

Removed: 167 Mesečni sastanak

Changed:

| ID | Task | Start | Finish | Total float | Other |
| --- | --- | --- | --- | --- | --- |
| 167 | Mesečni sastanak 12 | 2021-05-04 → 2021-04-05 (-29d) | 2021-05-04 → 2021-04-05 (-29d) | 449d → 470d | constraint start no earlier than 2021-05-04 → start no earlier than 2021-04-05 |
| 168 | Mesečni sastanak 13 | 2021-06-04 → 2021-05-04 (-31d) | 2021-06-04 → 2021-05-04 (-31d) | 426d → 449d | constraint start no earlier than 2021-06-04 → start no earlier than 2021-05-04 |
| 169 | Mesečni sastanak 14 | 2021-07-05 → 2021-06-04 (-31d) | 2021-07-05 → 2021-06-04 (-31d) | 405d → 426d | constraint start no earlier than 2021-07-05 → start no earlier than 2021-06-04 |
| 170 | Mesečni sastanak 15 | 2021-08-04 → 2021-07-05 (-30d) | 2021-08-04 → 2021-07-05 (-30d) | 383d → 405d | constraint start no earlier than 2021-08-04 → start no earlier than 2021-07-05 |
| 171 | Mesečni sastanak 16 | 2021-09-06 → 2021-08-04 (-33d) | 2021-09-06 → 2021-08-04 (-33d) | 360d → 383d | constraint start no earlier than 2021-09-06 → start no earlier than 2021-08-04 |
| 172 | Mesečni sastanak 17 | 2021-10-04 → 2021-09-06 (-28d) | 2021-10-04 → 2021-09-06 (-28d) | 340d → 360d | constraint start no earlier than 2021-10-04 → start no earlier than 2021-09-06 |
| 173 | Mesečni sastanak 18 | 2021-11-04 → 2021-10-04 (-31d) | 2021-11-04 → 2021-10-04 (-31d) | 317d → 340d | constraint start no earlier than 2021-11-04 → start no earlier than 2021-10-04 |
| 174 | Mesečni sastanak 19 | 2021-12-06 → 2021-11-04 (-32d) | 2021-12-06 → 2021-11-04 (-32d) | 295d → 317d | constraint start no earlier than 2021-12-06 → start no earlier than 2021-11-04 |
| 175 | Mesečni sastanak 20 | 2022-01-04 → 2021-12-06 (-29d) | 2022-01-04 → 2021-12-06 (-29d) | 274d → 295d | constraint start no earlier than 2022-01-04 → start no earlier than 2021-12-06 |
| 176 | Mesečni sastanak 21 | 2022-02-04 → 2022-01-04 (-31d) | 2022-02-04 → 2022-01-04 (-31d) | 251d → 274d | constraint start no earlier than 2022-02-04 → start no earlier than 2022-01-04 |
| 177 | Mesečni sastanak 22 | 2022-03-04 → 2022-02-04 (-28d) | 2022-03-04 → 2022-02-04 (-28d) | 231d → 251d | constraint start no earlier than 2022-03-04 → start no earlier than 2022-02-04 |
| 178 | Mesečni sastanak 23 | 2022-04-04 → 2022-03-04 (-31d) | 2022-04-04 → 2022-03-04 (-31d) | 210d → 231d | constraint start no earlier than 2022-04-04 → start no earlier than 2022-03-04 |
| 179 | Mesečni sastanak 24 | 2022-05-04 → 2022-04-04 (-30d) | 2022-05-04 → 2022-04-04 (-30d) | 188d → 210d | constraint start no earlier than 2022-05-04 → start no earlier than 2022-04-04 |
| 180 | Mesečni sastanak 25 | 2022-06-06 → 2022-05-04 (-33d) | 2022-06-06 → 2022-05-04 (-33d) | 165d → 188d | constraint start no earlier than 2022-06-06 → start no earlier than 2022-05-04 |
| 181 | Mesečni sastanak 26 | 2022-07-04 → 2022-06-06 (-28d) | 2022-07-04 → 2022-06-06 (-28d) | 145d → 165d | constraint start no earlier than 2022-07-04 → start no earlier than 2022-06-06 |
| 182 | Mesečni sastanak 27 | 2022-08-04 → 2022-07-04 (-31d) | 2022-08-04 → 2022-07-04 (-31d) | 122d → 145d | constraint start no earlier than 2022-08-04 → start no earlier than 2022-07-04 |
| 183 | Mesečni sastanak 28 | 2022-09-05 → 2022-08-04 (-32d) | 2022-09-05 → 2022-08-04 (-32d) | 100d → 122d | constraint start no earlier than 2022-09-05 → start no earlier than 2022-08-04 |
| 185 | Mesečni sastanak 30 |  |  |  | was named Mesečni sastanak |
| 186 | Mesečni sastanak 31 |  |  |  | was named Mesečni sastanak |
| 187 | Mesečni sastanak 32 |  |  |  | was named Mesečni sastanak |
| 188 | Mesečni sastanak 33 |  |  |  | was named Mesečni sastanak |

## Version 3 (saved 2020-05-21)

Note of the change: uradjen prvi paket raspored resursa

Last finish stays 2023-01-23.

Changed:

| ID | Task | Start | Other |
| --- | --- | --- | --- |
| 4 | Selekcija ljudi koji će raditi analizu |  | resources none → ELATEC Administration 1; UNHCR Administration 1; UNHCR Researcher 1 |
| 5 | Kratak opis posla |  | resources none → ELATEC Researcher 1; ETF Expert 1; UNHCR Administration 2 |
| 6 | Raspodela izabranih u timove |  | resources none → ELATEC Administration 1; UNHCR Administration 1; UNHCR Technician 1 |
| 7 | Dokumentovanje aktivnosti |  | resources none → ETF Expert 2; UNHCR Administration 2; UNHCR Technician 1 |
| 8 | **Planiranje analize tržišta** | 2020-05-07 → 2020-05-08 (+1d) |  |
| 9 | Definisanje aktivnosti koje će se izvršiti u fazi realizacije | 2020-05-07 → 2020-05-08 (+1d) | resources none → ETF Expert 1; ETF Researcher 1; IOM Researcher 1 |
| 10 | Podela aktivnosti po timovima |  | resources none → ELATEC Administration 1; UNHCR Administration 2; UNHCR Researcher 1 |
| 12 | Nalaženje pouzdanih izvora informacija |  | resources none → ELATEC Researcher 1; ETF Researcher 1; UNHCR Researcher 1 |
| 13 | Pravljenje anketa |  | resources none → ETF Expert 2; UNHCR Technician 1; IOM Researcher 1 |
| 14 | Instalacija i konfiguracija softvera za analizu prikupljenih podataka |  | resources none → ETF Expert 1; UNHCR Technician 1 |
| 15 | Pisanje izveštaja o planiranju analize |  | resources none → ELATEC Administration 1; UNHCR Administration 2 |
| 18 | Prikupljanje podataka o sličnim projektima |  | resources none → ETF Researcher 1; ETF Researcher 2; UNHCR Researcher 1 |
| 19 | Prikupljanje podataka sa odgovarajućih sajtova |  | resources none → ELATEC Administration 1; ELATEC Researcher 1 |
| 20 | Formiranje ciljnih grupa |  | resources none → ETF Expert 2; UNHCR Technician 1 |
| 21 | Intervjuisanje ciljnih grupa |  | resources none → IOM Researcher 1 |
| 22 | Analiziranje dobijenih podataka |  | resources none → ELATEC Researcher 1; IOM Researcher 1 |
| 23 | Pisanje izveštaja o tržištu |  | resources none → ELATEC Administration 1 |
| 24 | Pisanje studije izvodljivosti |  | resources none → ELATEC Researcher 1; UNHCR Researcher 1 |
| 25 | Praćenje napretka |  | resources none → UNHCR Administration 1 |
| 26 | Dokumentovanje aktivnosti |  | resources none → ETF Expert 2; UNHCR Administration 2; UNHCR Technician 1 |
| 28 | Pisanje završnog izveštaja |  | resources none → ELATEC Administration 1; ELATEC Researcher 1; ETF Expert 1 |
| 31 | Selekcija ljudi koji će raditi analizu |  | resources none → ELATEC Administration 1 |
| 32 | Kratak opis posla |  | resources none → ETF Expert 1; ETF Researcher 1 |
| 33 | Raspodela izabranih u timove |  | resources none → ELATEC Administration 1 |
| 34 | Dokumentovanje aktivnosti |  | resources none → UNHCR Administration 1; ETF Researcher 1 |
| 36 | Definisanje aktivnosti koje će se izvršiti u fazi realizacije |  | resources none → ETF Expert 2; ETF Researcher 1 |
| 37 | Podela aktivnosti po timovima |  | resources none → UNHCR Administration 2 |
| 39 | Pravljenje anketa |  | resources none → ELATEC Researcher 1; UNHCR Researcher 1 |
| 40 | Instalacija i konfiguracija softvera za analizu prikupljenih podataka |  | resources none → UNHCR Technician 1 |
| 41 | Pisanje izveštaja o planiranju analize |  | resources none → UNHCR Administration 2; ETF Expert 2 |
| 43 | Formiranje ciljnih grupa |  | resources none → ELATEC Researcher 1 |
| 44 | Nasumično izdvajanje ispitanika radi intervjuisanja |  | resources none → UNHCR Researcher 1 |
| 46 | Anketiranje ciljnih grupa |  | resources none → ETF Researcher 1; IOM Researcher 1 |
| 47 | Individualno intervjuisanje ispitanika |  | resources none → ETF Researcher 2 |
| 48 | Formiranje spiska korisničkih zahteva |  | resources none → ETF Researcher 2; UNHCR Researcher 1 |
| 50 | Analiza funkcionalnosti |  | resources none → ELATEC Administration 1; UNHCR Technician 1 |
| 51 | Pisanje scenarija slučajeva korišćenja |  | resources none → ETF Expert 1; UNHCR Technician 1 |
| 52 | Kreiranje izveštaja |  | resources none → ELATEC Administration 1; ETF Researcher 2 |
| 53 | Praćenje napretka |  | resources none → UNHCR Administration 2 |
| 55 | Pisanje završnog izveštaja |  | resources none → ETF Expert 2; ETF Researcher 2; UNHCR Administration 1 |
| 56 | Dobijanje odobrenja od menadžmenta |  | resources none → ELATEC Administration 1 |
| 57 | M1 - Završena analiza tržišta i svih korisničkih zahteva |  | resources none → ETF Expert 1 |

## Version 4 (saved 2020-05-22)

Note of the change: Raspodeljeni resursi

Last finish stays 2023-01-23.

Changed:

| ID | Task | Total float | Other |
| --- | --- | --- | --- |
| 60 | Definisanje zadataka, obima posla |  | resources none → ELATEC Technician 1; SL Research 1; UPC Research 1 |
| 61 | Procena trajanja projektnih faza |  | resources none → ELATEC Researcher 1; ETF Researcher 2; UNHCR Technician 1; UPC Research 1 |
| 62 | Vremenski rasporediti faze, zadatke |  | resources none → ELATEC Administration 1; UNHCR Administration 2; UPC Research 1; UPC Technician 1 |
| 64 | Određivanje broja radnika |  | resources none → SL Administration 1; SL Expert 1; UNHCR Administration 1 |
| 65 | Određivanje zahteva za opremom |  | resources none → ETF Expert 1; SL Technician 1; UPC Technician 1 |
| 67 | Određivanje plata |  | resources none → ELATEC Administration 1; IOM Researcher 1; SL Administration 1; UPC Administration 1 |
| 68 | Određivanje troškova za opremu |  | resources none → IOM Researcher 1; SL Administration 1; SL Technician 1; UPC Administration 1; UPC Expert 1; UPC Research 1 |
| 69 | Određivanje ostalih troškova |  | resources none → ELATEC Technician 1; ETF Researcher 2; UPC Technician 1 |
| 70 | Revizija i sumiranje troškova |  | resources none → ELATEC Expert 1; ETF Researcher 1 |
| 71 | Planiranje rizika |  | resources none → ELATEC Researcher 1; IOM Researcher 1; SL Administration 1; SL Technician 1; UPC Research 1 |
| 72 | Raspodela posla po participantima |  | resources none → ELATEC Administration 1; SL Administration 1; UPC Administration 1 |
| 73 | Definisanje načina komunikacije |  | resources none → SL Administration 1; UPC Expert 1 |
| 74 | Definisanje mera kvaliteta i performansi |  | resources none → ETF Expert 1; ETF Expert 2; SL Expert 1; SL Technician 1; UPC Expert 1 |
| 75 | Dokumentovati projektni plan |  | resources none → ELATEC Researcher 1; SL Expert 1; SL Research 1; UPC Research 1 |
| 76 | Dobijanje odobrenja od menadžmenta |  | resources none → ETF Researcher 1 |
| 77 | M2 - Završen plan projekta |  | resources none → ELATEC Technician 1 |
| 80 | Dizajniranje izgleda |  | resources none → ETF Expert 1; ETF Researcher 1; SL Technician 1; UPC Administration 1 |
| 81 | UML projektovanje |  | resources none → ETF Expert 1; SL Research 1; UPC Administration 1; ELATEC Technician 1 |
| 82 | Dokumentovanje aktivnosti |  | resources none → UPC Administration 1; ELATEC Expert 7; ETF Administration 5 |
| 84 | Dizajniranje hardvera |  | resources none → ELATEC Administration 1; ETF Expert 2; SL Expert 1; UPC Expert 1; ELATEC Technician 1 |
| 85 | UML projektovanje |  | resources none → ETF Expert 1; SL Expert 1; SL Research 1; SL Technician 1 |
| 86 | Dokumentovanje aktivnosti |  | resources none → ETF Administration 1 |
| 87 | Detaljan opis dizajna i arhitekture sistema |  | resources none → ELATEC Technician 1; ETF Researcher 1; SL Technician 1 |
| 88 | M3 - Završeno modelovanje sistema |  | resources none → ETF Administration 1 |
| 91 | Izrada stranice za korisnike |  | resources none → ELATEC Expert 1; SL Expert 1; UPC Technician 1; UPC Expert 6; UPC Technician 7 |
| 92 | Izrada stranica za operatere |  | resources none → SL Expert 1; SL Technician 1; IOM Researcher 2 |
| 93 | Integracija stranica za korisnike i operatere |  | resources none → IOM Technician 1; IOM Researcher 5; SL Technician 1; SL Technician 2 |
| 94 | Validacija prototipa |  | resources none → SL Research 1; UPC Administration 1; UPC Research 1; UPC Expert 1; UPC Technician 1 |
| 95 | Dokumentovanje aktivnosti |  | resources none → UPC Administration 1; SL Technician 1 |
| 96 | M4 - Završen prototip veb-portala |  | resources none → UPC Administration 1 |
| 99 | Izrada prototipa RFID kartice |  | resources none → ETF Expert 2; ETF Researcher 2; ELATEC Researcher 1; ELATEC Technician 1; ETF Expert 7; ETF Technician 4; SL Expert 7; SL Technician 7 |
| 100 | Izrada čitača i upisivača |  | resources none → ETF Expert 1; SL Administration 1; ELATEC Expert 10; ELATEC Technician 6 |
| 101 | Integracija prototipa sa čitačima i upisivačima |  | resources none → ETF Researcher 2; UNHCR Technician 1; ELATEC Technician 5; ETF Technician 6; SL Technician 5 |
| 102 | Validacija prototipa |  | resources none → SL Technician 1; UPC Research 1; ELATEC Technician 5; ETF Administration 6; ETF Technician 4 |
| 103 | Dokumentovanje aktivnosti |  | resources none → ETF Administration 1; ELATEC Expert 4 |
| 104 | M5 - Završen prototip kartice |  | resources none → ETF Administration 1 |
| 106 | Izrada čitača i upisivača |  | resources none → ELATEC Expert 5; ELATEC Expert 9; ELATEC Researcher 1; ELATEC Technician 5; SL Expert 7; SL Technician 4; UPC Expert 4; UPC Technician 5 |
| 107 | Izrada kartice |  | resources none → ELATEC Technician 1; SL Expert 4; SL Expert 7; SL Technician 2; SL Technician 3; SL Technician 7; UPC Expert 3; UPC Research 1; UPC Technician 4 |
| 108 | Implementacija biznis logike |  | resources none → ELATEC Expert 3; ELATEC Expert 5; ELATEC Expert 8; ELATEC Technician 2; SL Expert 5; SL Expert 7; SL Technician 4; SL Technician 6; UPC Expert 3; UPC Research 1; UPC Technician 4 |
| 109 | Implementacija bezbednosnih protokola |  | resources none → ELATEC Expert 4; ELATEC Expert 6; ELATEC Expert 8; ELATEC Technician 2; SL Expert 4; SL Expert 5; SL Expert 6; SL Expert 7; SL Technician 3; SL Technician 4; SL Technician 5; UPC Expert 4; UPC Expert 5; UPC Technician 3; UPC Technician 4; UPC Technician 5 |
| 111 | Integracija kartice, čitača i upisivača |  | resources none → ELATEC Expert 7; ELATEC Expert 8; ELATEC Expert 9; ELATEC Technician 5; ELATEC Technician 6; SL Expert 1; SL Expert 2; SL Expert 3; SL Research 1; SL Technician 2; SL Technician 3; UPC Expert 1; UPC Expert 2; UPC Technician 2; UPC Technician 3 |
| 112 | Integracija kartice i sigurnosnih protokola |  | resources none → ELATEC Expert 1; ELATEC Expert 2; ELATEC Expert 3; ELATEC Expert 4; ELATEC Expert 5; ELATEC Researcher 1; ELATEC Technician 1; ELATEC Technician 2; SL Expert 1; SL Expert 2; SL Expert 3; SL Expert 4; SL Expert 5; SL Technician 1; SL Technician 2; SL Technician 3; SL Technician 4; UPC Research 1; UPC Technician 1; UPC Technician 2; UPC Technician 3; UPC Technician 4 |
| 113 | Dokumentacija svih aktivnosti |  | resources none → ELATEC Administration 1; SL Administration 1; SL Technician 7 |
| 114 | M6 - Završena implementacija kartice |  | resources none → ELATEC Administration 1 |
| 116 | Implementacija frontenda |  | resources none → ETF Expert 1; ETF Expert 2; ETF Expert 3; ETF Technician 1; ETF Technician 2; ETF Technician 3; IOM Technician 1; SL Technician 2; IOM Researcher 5; SL Expert 1; SL Technician 3 |
| 117 | Implementacija backenda |  | resources none → ETF Expert 4; ETF Expert 5; ETF Expert 6; ETF Expert 7; ETF Technician 3; ETF Technician 4; ETF Technician 5; ETF Technician 6; SL Technician 5 |
| 118 | Implementacija bezbednosnih protokola |  | resources none → ETF Expert 6; ETF Expert 7; ETF Technician 5; ETF Technician 6 |
| 120 | Integracija frontenda i bekenda |  | resources none → SL Expert 2; SL Technician 1; ETF Expert 1; ETF Expert 2; ETF Technician 2; ETF Technician 3; SL Expert 1; SL Technician 2 |
| 121 | Integracija sa bezbednosnim protokolima |  | resources none → SL Technician 7; IOM Administration 1; IOM Technician 1 |
| 122 | Dokumentacija svih aktivnosti |  | resources none → ETF Administration 1; SL Administration 1 |
| 123 | M7 - Završena implementacija veb-portala |  | resources none → ETF Administration 1 |
| 125 | Pisanje testova |  | resources none → UPC Expert 1; UPC Expert 2; UPC Technician 1 |
| 126 | Pokretanje testova |  | resources none → ETF Expert 1; ETF Expert 2; UPC Expert 1; IOM Technician 1 |
| 127 | Ispravljanje pronađenih defekata |  | resources none → UPC Technician 1; UPC Technician 2; ETF Expert 1; ETF Expert 2; ETF Expert 3; ETF Technician 1; ETF Administration 8 |
| 128 | Kreiranje izveštaja |  | resources none → UPC Administration 1 |
| 129 | M8 - Završeno testiranje hardvera | 78d → 110d | resources none → UPC Administration 1 |
| 131 | Pisanje testova |  | resources none → UNHCR Administration 1; UNHCR Technician 1; UPC Expert 6; UPC Technician 1 |
| 132 | Pokretanje testova |  | resources none → ETF Technician 1; ETF Technician 2 |
| 133 | Ispravljanje pronađenih defekata |  | resources none → UNHCR Technician 1; UPC Expert 5; UPC Expert 6; UPC Technician 8 |
| 134 | Kreiranje izveštaja |  | resources none → ETF Administration 1; UNHCR Administration 2; UPC Administration 1 |
| 135 | M9 - Završeno testiranje softvera |  | resources none → UNHCR Administration 1 |
| 137 | Prikupljanje utisaka korisnika |  | resources none → ETF Administration 1; ETF Researcher 1; ETF Researcher 2; IOM Researcher 1; IOM Technician 1; UNHCR Researcher 1 |
| 138 | Kreiranje marketinškog plana |  | resources none → IOM Administration 1; IOM Researcher 1; IOM Researcher 2; IOM Researcher 3 |
| 139 | Priprema reklamnog materijala |  | resources none → UNHCR Researcher 1; UNHCR Researcher 2; UNHCR Researcher 3 |
| 141 | Internet marketing |  | resources none → ETF Researcher 1; ETF Researcher 2; IOM Researcher 2; IOM Researcher 3; UNHCR Researcher 2 |
| 142 | TV marketing |  | resources none → ETF Administration 1; ETF Technician 1; IOM Administration 1; IOM Researcher 5; UNHCR Administration 1; UNHCR Administration 2; UNHCR Researcher 3; UNHCR Researcher 4 |
| 143 | Učestvovanje na sajmovima i konferencijama |  | resources none → UNHCR Researcher 1; IOM Researcher 1 |
| 144 | Izveštaji i analizirane statistike |  | resources none → ETF Administration 1; IOM Administration 1 |
| 145 | M10 - Završena evaluacija i disiminacija |  | resources none → IOM Administration 1 |
| 147 | Uspravljanje rizicima |  | resources none → ETF Administration 2 |

| ID | Task | Start | Finish | Total float | Other |
| --- | --- | --- | --- | --- | --- |
| 148 | Upravljanje komunikacijom |  |  |  | resources none → ETF Administration 3 |
| 149 | Upravljanje merama kvaliteta i postupcima |  |  |  | resources none → ETF Administration 4 |
| 150 | Upravljanje obimom posla |  |  |  | resources none → ETF Administration 5 |
| 151 | Upravljanje vremenom |  |  |  | resources none → ETF Administration 6 |
| 152 | Upravljanje rashodima |  |  |  | resources none → ETF Administration 7 |
| 153 | Upravljanje ljudskim resursima |  |  |  | resources none → ETF Administration 8 |
| 156 | Mesečni sastanak 1 |  |  |  | resources none → ELATEC Administration 0; ETF Administration 0; IOM Administration 0; SL Administration 0; UNHCR Administration 0; UPC Administration 0 |
| 157 | Mesečni sastanak 2 |  |  |  | resources none → ELATEC Administration 0; ETF Administration 0; IOM Administration 0; SL Administration 0; UNHCR Administration 0; UPC Administration 0 |
| 158 | Mesečni sastanak 3 |  |  |  | resources none → ELATEC Administration 0; ETF Administration 0; IOM Administration 0; SL Administration 0; UNHCR Administration 0; UPC Administration 0 |
| 159 | Mesečni sastanak 4 |  |  |  | resources none → ELATEC Administration 0; ETF Administration 0; IOM Administration 0; SL Administration 0; UNHCR Administration 0; UPC Administration 0 |
| 160 | Mesečni sastanak 5 |  |  |  | resources none → ELATEC Administration 0; ETF Administration 0; IOM Administration 0; SL Administration 0; UNHCR Administration 0; UPC Administration 0 |
| 161 | Mesečni sastanak 6 |  |  |  | resources none → ELATEC Administration 0; ETF Administration 0; IOM Administration 0; SL Administration 0; UNHCR Administration 0; UPC Administration 0 |
| 162 | Mesečni sastanak 7 |  |  |  | resources none → ELATEC Administration 0; ETF Administration 0; IOM Administration 0; SL Administration 0; UNHCR Administration 0; UPC Administration 0 |
| 163 | Mesečni sastanak 8 |  |  |  | resources none → ELATEC Administration 0; ETF Administration 0; IOM Administration 0; SL Administration 0; UNHCR Administration 0; UPC Administration 0 |
| 164 | Mesečni sastanak 9 |  |  |  | resources none → ELATEC Administration 0; ETF Administration 0; IOM Administration 0; SL Administration 0; UNHCR Administration 0; UPC Administration 0 |
| 165 | Mesečni sastanak 10 |  |  |  | resources none → ELATEC Administration 0; ETF Administration 0; IOM Administration 0; SL Administration 0; UNHCR Administration 0; UPC Administration 0 |
| 166 | Mesečni sastanak 11 |  |  |  | resources none → ELATEC Administration 0; ETF Administration 0; IOM Administration 0; SL Administration 0; UNHCR Administration 0; UPC Administration 0 |
| 167 | Mesečni sastanak 12 |  |  |  | resources none → ELATEC Administration 0; ETF Administration 0; IOM Administration 0; SL Administration 0; UNHCR Administration 0; UPC Administration 0 |
| 168 | Mesečni sastanak 13 |  |  |  | resources none → ELATEC Administration 0; ETF Administration 0; IOM Administration 0; SL Administration 0; UNHCR Administration 0; UPC Administration 0 |
| 169 | Mesečni sastanak 14 |  |  |  | resources none → ELATEC Administration 0; ETF Administration 0; IOM Administration 0; SL Administration 0; UNHCR Administration 0; UPC Administration 0 |
| 170 | Mesečni sastanak 15 |  |  |  | resources none → ELATEC Administration 0; ETF Administration 0; IOM Administration 0; SL Administration 0; UNHCR Administration 0; UPC Administration 0 |
| 171 | Mesečni sastanak 16 |  |  |  | resources none → ELATEC Administration 0; ETF Administration 0; IOM Administration 0; SL Administration 0; UNHCR Administration 0; UPC Administration 0 |
| 172 | Mesečni sastanak 17 |  |  |  | resources none → ELATEC Administration 0; ETF Administration 0; IOM Administration 0; SL Administration 0; UNHCR Administration 0; UPC Administration 0 |
| 173 | Mesečni sastanak 18 |  |  |  | resources none → ELATEC Administration 0; ETF Administration 0; IOM Administration 0; SL Administration 0; UNHCR Administration 0; UPC Administration 0 |
| 174 | Mesečni sastanak 19 |  |  |  | resources none → ELATEC Administration 0; ETF Administration 0; IOM Administration 0; SL Administration 0; UNHCR Administration 0; UPC Administration 0 |
| 175 | Mesečni sastanak 20 |  |  |  | resources none → ELATEC Administration 0; ETF Administration 0; IOM Administration 0; SL Administration 0; UNHCR Administration 0; UPC Administration 0 |
| 176 | Mesečni sastanak 21 |  |  |  | resources none → ELATEC Administration 0; ETF Administration 0; IOM Administration 0; SL Administration 0; UNHCR Administration 0; UPC Administration 0 |
| 177 | Mesečni sastanak 22 |  |  |  | resources none → ELATEC Administration 0; ETF Administration 0; IOM Administration 0; SL Administration 0; UNHCR Administration 0; UPC Administration 0 |
| 178 | Mesečni sastanak 23 |  |  |  | resources none → ELATEC Administration 0; ETF Administration 0; IOM Administration 0; SL Administration 0; UNHCR Administration 0; UPC Administration 0 |
| 179 | Mesečni sastanak 24 |  |  |  | resources none → ELATEC Administration 0; ETF Administration 0; IOM Administration 0; SL Administration 0; UNHCR Administration 0; UPC Administration 0 |
| 180 | Mesečni sastanak 25 |  |  |  | resources none → ELATEC Administration 0; ETF Administration 0; IOM Administration 0; SL Administration 0; UNHCR Administration 0; UPC Administration 0 |
| 181 | Mesečni sastanak 26 |  |  |  | resources none → ELATEC Administration 0; ETF Administration 0; IOM Administration 0; SL Administration 0; UNHCR Administration 0; UPC Administration 0 |
| 182 | Mesečni sastanak 27 |  |  |  | resources none → ELATEC Administration 0; ETF Administration 0; IOM Administration 0; SL Administration 0; UNHCR Administration 0; UPC Administration 0 |
| 183 | Mesečni sastanak 28 |  |  |  | resources none → ELATEC Administration 0; ETF Administration 0; IOM Administration 0; SL Administration 0; UNHCR Administration 0; UPC Administration 0 |
| 184 | Mesečni sastanak 29 |  |  |  | resources none → ELATEC Administration 0; ETF Administration 0; IOM Administration 0; SL Administration 0; UNHCR Administration 0; UPC Administration 0 |
| 185 | Mesečni sastanak 30 |  |  |  | resources none → ELATEC Administration 0; ETF Administration 0; IOM Administration 0; SL Administration 0; UNHCR Administration 0; UPC Administration 0 |
| 186 | Mesečni sastanak 31 | 2020-11-04 → 2022-11-04 (+730d) | 2020-11-04 → 2022-11-04 (+730d) | 578d → 56d | constraint start no earlier than 2020-11-04 → start no earlier than 2022-11-04; resources none → ELATEC Administration 0; ETF Administration 0; IOM Administration 0; SL Administration 0; UNHCR Administration 0; UPC Administration 0 |
| 187 | Mesečni sastanak 32 |  |  |  | resources none → ELATEC Administration 0; ETF Administration 0; IOM Administration 0; SL Administration 0; UNHCR Administration 0; UPC Administration 0 |
| 188 | Mesečni sastanak 33 |  |  |  | resources none → ELATEC Administration 0; ETF Administration 0; IOM Administration 0; SL Administration 0; UNHCR Administration 0; UPC Administration 0 |
| 189 | Zatvaranje projekta |  |  |  | resources none → ELATEC Administration 0; ETF Administration 0; IOM Administration 0; SL Administration 0; UNHCR Administration 0; UPC Administration 0 |

## Version 5 (saved 2020-05-22)

Note of the change: smanjen budzet

Last finish stays 2023-01-23.

Changed:

| ID | Task | Other |
| --- | --- | --- |
| 4 | Selekcija ljudi koji će raditi analizu | resources ELATEC Administration 1; UNHCR Administration 1; UNHCR Researcher 1 → ELATEC Administration 1; UNHCR Researcher 1 |
| 5 | Kratak opis posla | resources ELATEC Researcher 1; ETF Expert 1; UNHCR Administration 2 → ETF Expert 1 |
| 6 | Raspodela izabranih u timove | resources ELATEC Administration 1; UNHCR Administration 1; UNHCR Technician 1 → ELATEC Administration 1; UNHCR Technician 1 |
| 7 | Dokumentovanje aktivnosti | resources ETF Expert 2; UNHCR Administration 2; UNHCR Technician 1 → ETF Expert 2; UNHCR Technician 1 |
| 9 | Definisanje aktivnosti koje će se izvršiti u fazi realizacije | resources ETF Expert 1; ETF Researcher 1; IOM Researcher 1 → ETF Expert 1; IOM Researcher 1 |
| 10 | Podela aktivnosti po timovima | resources ELATEC Administration 1; UNHCR Administration 2; UNHCR Researcher 1 → ELATEC Administration 1; UNHCR Administration 2 |
| 12 | Nalaženje pouzdanih izvora informacija | resources ELATEC Researcher 1; ETF Researcher 1; UNHCR Researcher 1 → ELATEC Researcher 1; UNHCR Researcher 1 |
| 13 | Pravljenje anketa | resources ETF Expert 2; UNHCR Technician 1; IOM Researcher 1 → ETF Expert 2; IOM Researcher 1 |
| 14 | Instalacija i konfiguracija softvera za analizu prikupljenih podataka | resources ETF Expert 1; UNHCR Technician 1 → ETF Expert 1 |
| 18 | Prikupljanje podataka o sličnim projektima | resources ETF Researcher 1; ETF Researcher 2; UNHCR Researcher 1 → ETF Researcher 1; UNHCR Researcher 1 |
| 19 | Prikupljanje podataka sa odgovarajućih sajtova | resources ELATEC Administration 1; ELATEC Researcher 1 → ELATEC Researcher 1 |
| 20 | Formiranje ciljnih grupa | resources ETF Expert 2; UNHCR Technician 1 → ETF Expert 2 |
| 22 | Analiziranje dobijenih podataka | resources ELATEC Researcher 1; IOM Researcher 1 → IOM Researcher 1 |
| 25 | Praćenje napretka | resources UNHCR Administration 1 → UNHCR Administration 2 |
| 26 | Dokumentovanje aktivnosti | resources ETF Expert 2; UNHCR Administration 2; UNHCR Technician 1 → UNHCR Administration 2 |
| 28 | Pisanje završnog izveštaja | resources ELATEC Administration 1; ELATEC Researcher 1; ETF Expert 1 → ELATEC Researcher 1; ETF Expert 1 |
| 34 | Dokumentovanje aktivnosti | resources UNHCR Administration 1; ETF Researcher 1 → ETF Researcher 1 |
| 36 | Definisanje aktivnosti koje će se izvršiti u fazi realizacije | resources ETF Expert 2; ETF Researcher 1 → ETF Researcher 1 |
| 39 | Pravljenje anketa | resources ELATEC Researcher 1; UNHCR Researcher 1 → UNHCR Researcher 1 |
| 41 | Pisanje izveštaja o planiranju analize | resources UNHCR Administration 2; ETF Expert 2 → UNHCR Administration 2 |
| 46 | Anketiranje ciljnih grupa | resources ETF Researcher 1; IOM Researcher 1 → IOM Researcher 1 |
| 48 | Formiranje spiska korisničkih zahteva | resources ETF Researcher 2; UNHCR Researcher 1 → ETF Researcher 2 |
| 51 | Pisanje scenarija slučajeva korišćenja | resources ETF Expert 1; UNHCR Technician 1 → ETF Expert 1 |
| 52 | Kreiranje izveštaja | resources ELATEC Administration 1; ETF Researcher 2 → ETF Researcher 2 |
| 55 | Pisanje završnog izveštaja | resources ETF Expert 2; ETF Researcher 2; UNHCR Administration 1 → ETF Expert 2; UNHCR Administration 1 |
| 60 | Definisanje zadataka, obima posla | resources ELATEC Technician 1; SL Research 1; UPC Research 1 → SL Research 1; UPC Research 1 |
| 61 | Procena trajanja projektnih faza | resources ELATEC Researcher 1; ETF Researcher 2; UNHCR Technician 1; UPC Research 1 → ELATEC Researcher 1; ETF Researcher 2; UNHCR Technician 1 |
| 62 | Vremenski rasporediti faze, zadatke | resources ELATEC Administration 1; UNHCR Administration 2; UPC Research 1; UPC Technician 1 → ELATEC Administration 1; UNHCR Administration 2; UPC Research 1 |
| 64 | Određivanje broja radnika | resources SL Administration 1; SL Expert 1; UNHCR Administration 1 → SL Administration 1; UNHCR Administration 1 |
| 65 | Određivanje zahteva za opremom | resources ETF Expert 1; SL Technician 1; UPC Technician 1 → ETF Expert 1; UPC Technician 1 |
| 67 | Određivanje plata | resources ELATEC Administration 1; IOM Researcher 1; SL Administration 1; UPC Administration 1 → ELATEC Administration 1; IOM Researcher 1; SL Administration 1 |
| 68 | Određivanje troškova za opremu | resources IOM Researcher 1; SL Administration 1; SL Technician 1; UPC Administration 1; UPC Expert 1; UPC Research 1 → IOM Researcher 1; SL Technician 1; UPC Administration 1; UPC Expert 1; UPC Research 1 |
| 69 | Određivanje ostalih troškova | resources ELATEC Technician 1; ETF Researcher 2; UPC Technician 1 → ELATEC Technician 1; UPC Technician 1 |
| 70 | Revizija i sumiranje troškova | resources ELATEC Expert 1; ETF Researcher 1 → ELATEC Expert 1 |
| 71 | Planiranje rizika | resources ELATEC Researcher 1; IOM Researcher 1; SL Administration 1; SL Technician 1; UPC Research 1 → ELATEC Researcher 1; IOM Researcher 1; SL Administration 1; UPC Research 1 |
| 72 | Raspodela posla po participantima | resources ELATEC Administration 1; SL Administration 1; UPC Administration 1 → ELATEC Administration 1; SL Administration 1 |
| 73 | Definisanje načina komunikacije | resources SL Administration 1; UPC Expert 1 → UPC Expert 1 |
| 74 | Definisanje mera kvaliteta i performansi | resources ETF Expert 1; ETF Expert 2; SL Expert 1; SL Technician 1; UPC Expert 1 → ETF Expert 1; SL Technician 1; UPC Expert 1 |
| 75 | Dokumentovati projektni plan | resources ELATEC Researcher 1; SL Expert 1; SL Research 1; UPC Research 1 → ELATEC Researcher 1; UPC Research 1 |
| 80 | Dizajniranje izgleda | resources ETF Expert 1; ETF Researcher 1; SL Technician 1; UPC Administration 1 → ETF Expert 1; ETF Researcher 1; UPC Administration 1 |
| 81 | UML projektovanje | resources ETF Expert 1; SL Research 1; UPC Administration 1; ELATEC Technician 1 → ETF Expert 1; SL Research 1; UPC Administration 1 |
| 82 | Dokumentovanje aktivnosti | resources UPC Administration 1; ELATEC Expert 7; ETF Administration 5 → ELATEC Expert 7; ETF Administration 5 |
| 84 | Dizajniranje hardvera | resources ELATEC Administration 1; ETF Expert 2; SL Expert 1; UPC Expert 1; ELATEC Technician 1 → ETF Expert 2; SL Expert 1; UPC Expert 1; ELATEC Technician 1 |
| 85 | UML projektovanje | resources ETF Expert 1; SL Expert 1; SL Research 1; SL Technician 1 → ETF Expert 1; SL Expert 1; SL Research 1 |
| 87 | Detaljan opis dizajna i arhitekture sistema | resources ELATEC Technician 1; ETF Researcher 1; SL Technician 1 → ELATEC Technician 1; SL Technician 1 |
| 91 | Izrada stranice za korisnike | resources ELATEC Expert 1; SL Expert 1; UPC Technician 1; UPC Expert 6; UPC Technician 7 → ELATEC Expert 1; SL Expert 1; UPC Expert 6 |
| 93 | Integracija stranica za korisnike i operatere | resources IOM Technician 1; IOM Researcher 5; SL Technician 1; SL Technician 2 → IOM Researcher 5; SL Technician 1 |
| 94 | Validacija prototipa | resources SL Research 1; UPC Administration 1; UPC Research 1; UPC Expert 1; UPC Technician 1 → SL Research 1; UPC Administration 1; UPC Research 1 |
| 99 | Izrada prototipa RFID kartice | resources ETF Expert 2; ETF Researcher 2; ELATEC Researcher 1; ELATEC Technician 1; ETF Expert 7; ETF Technician 4; SL Expert 7; SL Technician 7 → ETF Expert 2; ETF Researcher 2; ELATEC Researcher 1; ETF Technician 4; SL Expert 7; SL Technician 7 |
| 100 | Izrada čitača i upisivača | resources ETF Expert 1; SL Administration 1; ELATEC Expert 10; ELATEC Technician 6 → ETF Expert 1; SL Administration 1; ELATEC Expert 10 |
| 101 | Integracija prototipa sa čitačima i upisivačima | resources ETF Researcher 2; UNHCR Technician 1; ELATEC Technician 5; ETF Technician 6; SL Technician 5 → ETF Researcher 2; UNHCR Technician 1; ELATEC Technician 5; SL Technician 5 |
| 102 | Validacija prototipa | resources SL Technician 1; UPC Research 1; ELATEC Technician 5; ETF Administration 6; ETF Technician 4 → SL Technician 1; UPC Research 1; ELATEC Technician 5; ETF Technician 4 |
| 106 | Izrada čitača i upisivača | resources ELATEC Expert 5; ELATEC Expert 9; ELATEC Researcher 1; ELATEC Technician 5; SL Expert 7; SL Technician 4; UPC Expert 4; UPC Technician 5 → ELATEC Expert 5; ELATEC Researcher 1; SL Expert 7; SL Technician 4; UPC Expert 4 |
| 107 | Izrada kartice | resources ELATEC Technician 1; SL Expert 4; SL Expert 7; SL Technician 2; SL Technician 3; SL Technician 7; UPC Expert 3; UPC Research 1; UPC Technician 4 → ELATEC Technician 1; SL Expert 4; SL Technician 2; SL Technician 7; UPC Expert 3; UPC Technician 4 |
| 108 | Implementacija biznis logike | resources ELATEC Expert 3; ELATEC Expert 5; ELATEC Expert 8; ELATEC Technician 2; SL Expert 5; SL Expert 7; SL Technician 4; SL Technician 6; UPC Expert 3; UPC Research 1; UPC Technician 4 → ELATEC Expert 3; ELATEC Technician 2; SL Expert 5; SL Technician 4; SL Technician 6; UPC Expert 3 |
| 109 | Implementacija bezbednosnih protokola | resources ELATEC Expert 4; ELATEC Expert 6; ELATEC Expert 8; ELATEC Technician 2; SL Expert 4; SL Expert 5; SL Expert 6; SL Expert 7; SL Technician 3; SL Technician 4; SL Technician 5; UPC Expert 4; UPC Expert 5; UPC Technician 3; UPC Technician 4; UPC Technician 5 → ELATEC Expert 4; ELATEC Expert 6; ELATEC Expert 8; ELATEC Technician 2; SL Expert 4; SL Expert 5; SL Technician 4; UPC Expert 4; UPC Technician 3; UPC Technician 5 |
| 111 | Integracija kartice, čitača i upisivača | resources ELATEC Expert 7; ELATEC Expert 8; ELATEC Expert 9; ELATEC Technician 5; ELATEC Technician 6; SL Expert 1; SL Expert 2; SL Expert 3; SL Research 1; SL Technician 2; SL Technician 3; UPC Expert 1; UPC Expert 2; UPC Technician 2; UPC Technician 3 → ELATEC Expert 7; ELATEC Expert 9; ELATEC Technician 5; SL Expert 1; SL Expert 2; SL Research 1; SL Technician 3; UPC Expert 2; UPC Technician 2 |
| 112 | Integracija kartice i sigurnosnih protokola | resources ELATEC Expert 1; ELATEC Expert 2; ELATEC Expert 3; ELATEC Expert 4; ELATEC Expert 5; ELATEC Researcher 1; ELATEC Technician 1; ELATEC Technician 2; SL Expert 1; SL Expert 2; SL Expert 3; SL Expert 4; SL Expert 5; SL Technician 1; SL Technician 2; SL Technician 3; SL Technician 4; UPC Research 1; UPC Technician 1; UPC Technician 2; UPC Technician 3; UPC Technician 4 → ELATEC Expert 1; ELATEC Expert 2; ELATEC Expert 5; ELATEC Researcher 1; ELATEC Technician 1; SL Expert 1; SL Expert 2; SL Expert 3; SL Technician 1; SL Technician 2; SL Technician 3; UPC Research 1; UPC Technician 1; UPC Technician 2 |
| 113 | Dokumentacija svih aktivnosti | resources ELATEC Administration 1; SL Administration 1; SL Technician 7 → ELATEC Administration 1; SL Administration 1 |
| 116 | Implementacija frontenda | resources ETF Expert 1; ETF Expert 2; ETF Expert 3; ETF Technician 1; ETF Technician 2; ETF Technician 3; IOM Technician 1; SL Technician 2; IOM Researcher 5; SL Expert 1; SL Technician 3 → ETF Expert 1; ETF Expert 2; ETF Technician 1; ETF Technician 2; IOM Technician 1; SL Technician 2; IOM Researcher 5; SL Expert 1 |
| 117 | Implementacija backenda | resources ETF Expert 4; ETF Expert 5; ETF Expert 6; ETF Expert 7; ETF Technician 3; ETF Technician 4; ETF Technician 5; ETF Technician 6; SL Technician 5 → ETF Expert 4; ETF Expert 5; ETF Technician 3; ETF Technician 4; SL Technician 5 |
| 118 | Implementacija bezbednosnih protokola | resources ETF Expert 6; ETF Expert 7; ETF Technician 5; ETF Technician 6 → ETF Expert 6; ETF Technician 5; ETF Technician 6 |
| 120 | Integracija frontenda i bekenda | resources SL Expert 2; SL Technician 1; ETF Expert 1; ETF Expert 2; ETF Technician 2; ETF Technician 3; SL Expert 1; SL Technician 2 → SL Expert 2; SL Technician 1; ETF Expert 1; ETF Expert 2; ETF Technician 2; SL Expert 1 |
| 121 | Integracija sa bezbednosnim protokolima | resources SL Technician 7; IOM Administration 1; IOM Technician 1 → SL Technician 7; IOM Administration 1 |
| 125 | Pisanje testova | resources UPC Expert 1; UPC Expert 2; UPC Technician 1 → UPC Expert 1; UPC Technician 1 |
| 126 | Pokretanje testova | resources ETF Expert 1; ETF Expert 2; UPC Expert 1; IOM Technician 1 → ETF Expert 1; UPC Expert 1; IOM Technician 1 |
| 127 | Ispravljanje pronađenih defekata | resources UPC Technician 1; UPC Technician 2; ETF Expert 1; ETF Expert 2; ETF Expert 3; ETF Technician 1; ETF Administration 8 → UPC Technician 1; ETF Expert 1; ETF Technician 1; ETF Administration 8 |
| 131 | Pisanje testova | resources UNHCR Administration 1; UNHCR Technician 1; UPC Expert 6; UPC Technician 1 → UNHCR Administration 1; UPC Expert 6 |
| 132 | Pokretanje testova | resources ETF Technician 1; ETF Technician 2 → ETF Technician 1 |
| 133 | Ispravljanje pronađenih defekata | resources UNHCR Technician 1; UPC Expert 5; UPC Expert 6; UPC Technician 8 → UNHCR Technician 1; UPC Expert 5; UPC Technician 8 |

| ID | Task | Other |
| --- | --- | --- |
| 134 | Kreiranje izveštaja | resources ETF Administration 1; UNHCR Administration 2; UPC Administration 1 → ETF Administration 1; UPC Administration 1 |
| 137 | Prikupljanje utisaka korisnika | resources ETF Administration 1; ETF Researcher 1; ETF Researcher 2; IOM Researcher 1; IOM Technician 1; UNHCR Researcher 1 → ETF Administration 1; ETF Researcher 1; IOM Researcher 1; UNHCR Researcher 1 |
| 138 | Kreiranje marketinškog plana | resources IOM Administration 1; IOM Researcher 1; IOM Researcher 2; IOM Researcher 3 → IOM Administration 1; IOM Researcher 1 |
| 139 | Priprema reklamnog materijala | resources UNHCR Researcher 1; UNHCR Researcher 2; UNHCR Researcher 3 → UNHCR Researcher 1; UNHCR Researcher 2 |
| 141 | Internet marketing | resources ETF Researcher 1; ETF Researcher 2; IOM Researcher 2; IOM Researcher 3; UNHCR Researcher 2 → ETF Researcher 1; IOM Researcher 3; UNHCR Researcher 2 |
| 142 | TV marketing | resources ETF Administration 1; ETF Technician 1; IOM Administration 1; IOM Researcher 5; UNHCR Administration 1; UNHCR Administration 2; UNHCR Researcher 3; UNHCR Researcher 4 → ETF Administration 1; ETF Technician 1; IOM Administration 1; UNHCR Administration 1; UNHCR Researcher 3 |
